# Office Move

Schedule from MS Project, 2010-11-01 to 2011-08-03.

## Calendars

- Standard: Mon-Fri 08:00-12:00, 13:00-17:00; Sat-Sun off.

## Resources

| Resource |
| --- |
| Relo PM |
| Office manager |
| Telecom admin |
| Network mgr |
| Mailroom |
| Accounting mgr |
| Local phone company |
| Cleaning service |
| Webmaster |
| Movers |
| Telecommunications administrator |
| Mailroom administrator |
| Architect |

## Schedule

| ID | WBS | Task | Type | Duration | Start | Finish | Predecessors | Total slack | Free slack | Resources | Work |
| --- | --- | --- | --- | --- | --- | --- | --- | --- | --- | --- | --- |
| 1 | 1 | **Planning Move** |  | 60d | 2010-11-01 | 2011-01-21 |  |  |  |  | 720h |
| 2 | 1.1 | **Document requirements** |  | 33d | 2010-11-01 | 2010-12-15 |  | 27d |  |  | 80h |
| 3 | 1.1.1 | Identify physical requirements |  | 30d | 2010-11-01 | 2010-12-10 |  | 27.5d | 0d |  |  |
| 4 | 1.1.2 | Draft the budget |  | 10d | 2010-12-01 | 2010-12-15 | 3FS-2.5% | 139.88d | 25d | Relo PM | 80h |
| 5 | 1.1.3 | Review requirements with management | manual | 1d | 2010-12-15 | 2010-12-15 |  |  |  |  |  |
| 6 | 1.2 | **Choose new location** |  | 47.5d | 2010-12-13 | 2011-02-16 |  | 0d |  |  | 440h |
| 7 | 1.2.1 | **Evaluate lease sites** |  | 47.5d | 2010-12-13 | 2011-02-16 |  |  |  |  | 440h |
| 8 | 1.2.1.1 | Identify potential sites | manual | 20d | 2010-12-13 | 2011-01-07 | 3 |  |  | Relo PM | 160h |
| 9 | 1.2.1.2 | Identify tenant improvements | manual | 7.5d | 2011-01-10 | 2011-01-19 |  |  |  | Office manager; Relo PM | 120h |
| 10 | 1.2.1.3 | Select site | manual | 10d | 2011-01-19 | 2011-02-02 | 4 |  |  | Relo PM | 80h |
| 11 | 1.2.1.4 | Finalize lease | manual | 10d | 2011-02-02 | 2011-02-16 |  |  |  | Relo PM | 80h |
| 12 | 1.3 | **Identify costs** |  | 20d | 2011-01-19 | 2011-02-16 |  |  |  |  | 160h |
| 13 | 1.3.1 | Obtain estimates for tenant improvements | manual | 10d | 2011-01-19 | 2011-02-02 |  |  |  | Office manager | 80h |
| 14 | 1.3.2 | Identify additional costs (furniture, equipment) | manual | 10d | 2011-02-02 | 2011-02-16 |  |  |  | Relo PM | 80h |
| 15 | 1.4 | Hire contractors for major tenant improvements |  | 5d | 2011-02-02 | 2011-02-09 | 13 | 0d |  | Relo PM | 40h |
| 16 | 1.5 | Planning complete | milestone, manual | 0d | 2011-02-09 | 2011-02-09 | 15 |  |  |  |  |
| 17 | 2 | **Construct and set up space** |  | 102d | 2011-02-16 | 2011-07-08 | 16 |  |  |  | 936h |
| 18 | 2.1 | **Prep phone system** |  | 5d | 2011-02-16 | 2011-02-23 |  | 93d |  |  | 40h |
| 19 | 2.1.1 | Review phone system requirements |  | 3d | 2011-02-16 | 2011-02-21 |  | 93d | 0d | Telecom admin | 24h |
| 20 | 2.1.2 | Order new phone numbers |  | 1d | 2011-02-21 | 2011-02-22 | 19 | 93d | 0d | Telecom admin | 8h |
| 21 | 2.1.3 | Order long-distance service |  | 1d | 2011-02-22 | 2011-02-23 | 20 | 93d | 0d | Telecom admin | 8h |
| 22 | 2.1.4 | Phone lines ordered | milestone | 0d | 2011-02-23 | 2011-02-23 | 21 | 93d | 87d |  |  |
| 23 | 2.2 | **Design and construction** |  | 98d | 2011-02-16 | 2011-07-04 |  | 0d |  |  | 344h |
| 24 | 2.2.1 | **Design space** |  | 66d | 2011-02-16 | 2011-05-19 |  | 0d |  |  | 320h |
| 25 | 2.2.1.1 | Design office space |  | 25d | 2011-02-16 | 2011-03-23 |  | 0d |  | Office manager [50%]; Architect | 200h |
| 26 | 2.2.1.2 | Prepare drawings |  | 5d | 2011-03-23 | 2011-03-30 | 25 | 0d |  | Architect | 40h |
| 27 | 2.2.1.3 | Design IT infrastructure |  | 10d | 2011-03-30 | 2011-04-13 | 26 | 0d |  | Network mgr | 80h |
| 28 | 2.2.1.4 | Obtain final budget estimates |  | 10d | 2011-04-13 | 2011-04-27 | 27 | 0d |  |  |  |
| 29 | 2.2.1.5 | Sign off on plans |  | 1d | 2011-04-27 | 2011-04-28 | 28 | 0d |  |  |  |
| 30 | 2.2.1.6 | Obtain permits |  | 3w | 2011-04-28 | 2011-05-19 | 29 | 0d |  |  |  |

| ID | WBS | Task | Type | Duration | Start | Finish | Predecessors | Total slack | Free slack | Resources | Work |
| --- | --- | --- | --- | --- | --- | --- | --- | --- | --- | --- | --- |
| 31 | 2.2.2 | **Construction** |  | 20d | 2011-05-19 | 2011-06-16 | 30 | 0d |  |  |  |
| 32 | 2.2.2.1 | Demolish walls |  | 5d | 2011-05-19 | 2011-05-26 |  | 0d |  |  |  |
| 33 | 2.2.2.2 | Construct new walls |  | 15d | 2011-05-26 | 2011-06-16 | 32 | 0d |  |  |  |
| 34 | 2.2.2.3 | Elec, mech, HVAC |  | 15d | 2011-05-26 | 2011-06-16 | 32 | 0d |  |  |  |
| 35 | 2.2.3 | **Walkthrough and repair** |  | 12d | 2011-06-16 | 2011-07-04 | 34, 33 | 0d |  |  | 24h |
| 36 | 2.2.3.1 | Repair issues |  | 5d | 2011-06-16 | 2011-06-23 |  | 0d |  |  |  |
| 37 | 2.2.3.2 | Schedule open house for employees |  | 1d | 2011-06-23 | 2011-06-24 | 36 | 9d | 5d | Relo PM; Office manager | 16h |
| 38 | 2.2.3.3 | Clean new office |  | 1d | 2011-06-23 | 2011-06-24 | 36 | 0d |  | Cleaning service | 8h |
| 39 | 2.2.3.4 | Construction complete | milestone | 0d | 2011-06-24 | 2011-06-24 | 38 | 0d |  |  |  |
| 40 | 2.2.3.5 | Open house |  | 1d | 2011-07-01 | 2011-07-04 | 39FS+5d, 37 | 4d |  |  |  |
| 41 | 2.3 | **Set up services** |  | 10d | 2011-02-16 | 2011-03-02 |  | 92d |  |  | 200h |
| 42 | 2.3.1 | Order change of address labels |  | 1d | 2011-02-16 | 2011-02-17 |  | 101d |  | Mailroom | 8h |
| 43 | 2.3.2 | Obtain estimates from signage companies |  | 7d | 2011-02-16 | 2011-02-25 |  | 92d | 0d | Office manager | 56h |
| 44 | 2.3.3 | Order signage |  | 3d | 2011-02-25 | 2011-03-02 | 43 | 92d |  | Office manager | 24h |
| 45 | 2.3.4 | Arrange external maintenance |  | 5d | 2011-02-16 | 2011-02-23 |  | 97d |  | Office manager | 40h |
| 46 | 2.3.5 | Arrange for trash disposal |  | 1d | 2011-02-16 | 2011-02-17 |  | 101d |  | Office manager | 8h |
| 47 | 2.3.6 | Arrange for cleaning service |  | 1d | 2011-02-16 | 2011-02-17 |  | 101d |  | Office manager | 8h |
| 48 | 2.3.7 | Arrange for recycling |  | 1d | 2011-02-16 | 2011-02-17 |  | 101d |  | Office manager | 8h |
| 49 | 2.3.8 | Order security system |  | 2d | 2011-02-16 | 2011-02-18 |  | 100d |  | Office manager | 16h |
| 50 | 2.3.9 | Send change of address to vendors, customers, supscriptions |  | 1d | 2011-02-16 | 2011-02-17 |  | 101d |  | Mailroom | 8h |
| 51 | 2.3.10 | Notify all leasers of equipment move |  | 1d | 2011-02-16 | 2011-02-17 |  | 101d |  | Office manager | 8h |
| 52 | 2.3.11 | Order checks with new address |  | 1d | 2011-02-16 | 2011-02-17 |  | 101d |  | Office manager | 8h |
| 53 | 2.3.12 | Schedule disconnection of utilities |  | 1d | 2011-02-16 | 2011-02-17 |  | 101d |  | Office manager | 8h |
| 54 | 2.4 | **Create office assignment layout** |  | 31d | 2011-02-16 | 2011-03-31 |  | 71d |  |  | 80h |
| 55 | 2.4.1 | Assign office spaces |  | 5d | 2011-03-23 | 2011-03-30 | 25 | 70d | 0d | Office manager | 40h |
| 56 | 2.4.2 | Assign new phone numbers, extensions |  | 2d | 2011-02-16 | 2011-02-18 |  | 98d | 0d | Telecom admin | 16h |
| 57 | 2.4.3 | Create new office extension directory |  | 1d | 2011-02-18 | 2011-02-21 | 56 | 98d | 0d | Telecommunications administrator | 8h |
| 58 | 2.4.4 | Create new office layout map |  | 1d | 2011-03-30 | 2011-03-31 | 55 | 70d | 0d | Office manager | 8h |
| 59 | 2.4.5 | Create new fax cover sheet |  | 1d | 2011-02-21 | 2011-02-22 | 57 | 98d |  | Office manager | 8h |
| 60 | 2.4.6 | Office plan complete | milestone | 0d | 2011-03-31 | 2011-03-31 | 58, 57 | 70d | 0d |  |  |

| ID | WBS | Task | Type | Duration | Start | Finish | Predecessors | Total slack | Free slack | Resources | Work |
| --- | --- | --- | --- | --- | --- | --- | --- | --- | --- | --- | --- |
| 61 | 2.5 | **Order new stationery** |  | 1d | 2011-03-31 | 2011-04-01 | 60 | 70d |  |  | 56h |
| 62 | 2.5.1 | Order new letterhead and envelopes |  | 1d | 2011-03-31 | 2011-04-01 |  | 70d |  | Office manager | 8h |
| 63 | 2.5.2 | Order new business cards |  | 1d | 2011-03-31 | 2011-04-01 |  | 70d |  | Office manager | 8h |
| 64 | 2.5.3 | Order new business forms |  | 1d | 2011-03-31 | 2011-04-01 |  | 70d |  | Office manager | 8h |
| 65 | 2.5.4 | Get shipping labels |  | 1d | 2011-03-31 | 2011-04-01 |  | 70d |  | Mailroom administrator | 8h |
| 66 | 2.5.5 | Create map to location |  | 1d | 2011-03-31 | 2011-04-01 |  | 70d |  | Office manager | 8h |
| 67 | 2.5.6 | Notify post office of change of address |  | 1d | 2011-03-31 | 2011-04-01 |  | 70d |  | Mailroom | 8h |
| 68 | 2.5.7 | Update company website with new information |  | 1d | 2011-03-31 | 2011-04-01 |  | 70d |  | Webmaster | 8h |
| 69 | 2.6 | **Hire movers** |  | 13d | 2011-02-16 | 2011-03-07 |  | 89d |  |  | 104h |
| 70 | 2.6.1 | Obtain estimates from moving companies |  | 12d | 2011-02-16 | 2011-03-04 |  | 89d | 0d | Relo PM | 96h |
| 71 | 2.6.2 | Choose moving company |  | 1d | 2011-03-04 | 2011-03-07 | 70 | 89d |  | Relo PM | 8h |
| 72 | 2.7 | **Obtain insurance** |  | 10d | 2011-06-24 | 2011-07-08 | 39 | 0d |  |  | 112h |
| 73 | 2.7.1 | Appraise assets |  | 3d | 2011-06-24 | 2011-06-29 |  | 0d |  | Accounting mgr | 24h |
| 74 | 2.7.2 | Obtain quotes for insurance |  | 6d | 2011-06-29 | 2011-07-07 | 73 | 0d |  | Office manager | 48h |
| 75 | 2.7.3 | Purchase insurance |  | 1d | 2011-07-07 | 2011-07-08 | 74 | 0d |  | Office manager | 8h |
| 76 | 2.7.4 | **Pre-move tasks** |  | 4d | 2011-06-24 | 2011-06-30 |  | 6d |  |  | 32h |
| 77 | 2.7.4.1 | Install phone system |  | 4d | 2011-06-24 | 2011-06-30 | 22 | 6d |  | Telecom admin | 32h |
| 78 | 3 | Construction and prep complete | milestone | 0d | 2011-07-08 | 2011-07-08 | 17, 71, 75, 54 | 0d |  |  |  |
| 79 | 4 | **Move** |  | 9d | 2011-07-08 | 2011-07-21 | 78, 41 | 0d |  |  | 56h |
| 80 | 4.1 | Inventory office |  | 5d | 2011-07-08 | 2011-07-15 |  | 0d |  | Office manager | 40h |
| 81 | 4.2 | Distribute new keys, cards |  | 1d | 2011-07-08 | 2011-07-11 |  | 8d |  | Office manager | 8h |
| 82 | 4.3 | Collect old keys, cards |  | 1d | 2011-07-08 | 2011-07-11 |  | 4d |  | Office manager | 8h |
| 83 | 4.4 | Pack and move |  | 4d | 2011-07-15 | 2011-07-21 | 82, 80 | 0d |  |  |  |
| 84 | 4.5 | Move complete | milestone | 0d | 2011-07-21 | 2011-07-21 | 80, 81, 62, 63, 64, 67, 68, 53, 83 | 0d |  |  |  |

| ID | WBS | Task | Type | Duration | Start | Finish | Predecessors | Total slack | Resources | Work |
| --- | --- | --- | --- | --- | --- | --- | --- | --- | --- | --- |
| 85 | 5 | **Post-Move** |  | 9d | 2011-07-21 | 2011-08-03 | 84 | 0d |  | 104h |
| 86 | 5.1 | Check for damage and missing items |  | 9d | 2011-07-21 | 2011-08-03 |  | 0d | Office manager | 72h |
| 87 | 5.2 | Schedule phone training |  | 1d | 2011-07-21 | 2011-07-22 |  | 8d | Telecom admin | 8h |
| 88 | 5.3 | Schedule security training |  | 1d | 2011-07-21 | 2011-07-22 |  | 8d | Office manager | 8h |
| 89 | 5.4 | Schedule fire drill |  | 1d | 2011-07-21 | 2011-07-22 |  | 8d | Office manager | 8h |
| 90 | 5.5 | Schedule open house for clients |  | 1d | 2011-07-21 | 2011-07-22 |  | 8d | Relo PM | 8h |
| 91 | 5.6 | Office move complete | milestone | 0d | 2011-08-03 | 2011-08-03 | 84, 86, 87, 88, 89, 90 | 0d |  |  |
