# Office Move

Schedule from MS Project, 2010-11-01 to 2012-01-11.

## Calendars

- Standard: Mon-Fri 08:00-12:00, 13:00-17:00; Sat-Sun off.

## Resources

| Resource |
| --- |
| Relo PM |
| Office manager |
| Telecom admin |
| Network mgr |
| Mailroom |
| Accounting mgr |
| Local phone company |
| Cleaning service |
| Webmaster |
| Movers |
| Telecommunications administrator |
| Mailroom administrator |
| Architect |

## Schedule

| ID | WBS | Task | Duration | Start | Finish | Total slack | Constraint |
| --- | --- | --- | --- | --- | --- | --- | --- |
| 1 | 1 | **Mgt meetings** | 310.38d | 2010-11-03 | 2012-01-11 | 0d |  |
| 2 | 1.1 | Mgt meetings 1 | 3h | 2010-11-03 | 2010-11-03 | 318.12d | start no earlier than 2010-11-03 |
| 3 | 1.2 | Mgt meetings 2 | 3h | 2010-11-17 | 2010-11-17 | 308.12d | start no earlier than 2010-11-17 |
| 4 | 1.3 | Mgt meetings 3 | 3h | 2010-12-01 | 2010-12-01 | 298.12d | start no earlier than 2010-12-01 |
| 5 | 1.4 | Mgt meetings 4 | 3h | 2010-12-15 | 2010-12-15 | 288.12d | start no earlier than 2010-12-15 |
| 6 | 1.5 | Mgt meetings 5 | 3h | 2010-12-29 | 2010-12-29 | 278.12d | start no earlier than 2010-12-29 |
| 7 | 1.6 | Mgt meetings 6 | 3h | 2011-01-12 | 2011-01-12 | 268.12d | start no earlier than 2011-01-12 |
| 8 | 1.7 | Mgt meetings 7 | 3h | 2011-01-26 | 2011-01-26 | 258.12d | start no earlier than 2011-01-26 |
| 9 | 1.8 | Mgt meetings 8 | 3h | 2011-02-09 | 2011-02-09 | 248.12d | start no earlier than 2011-02-09 |
| 10 | 1.9 | Mgt meetings 9 | 3h | 2011-02-23 | 2011-02-23 | 238.12d | start no earlier than 2011-02-23 |
| 11 | 1.10 | Mgt meetings 10 | 3h | 2011-03-09 | 2011-03-09 | 228.12d | start no earlier than 2011-03-09 |
| 12 | 1.11 | Mgt meetings 11 | 3h | 2011-03-23 | 2011-03-23 | 218.12d | start no earlier than 2011-03-23 |
| 13 | 1.12 | Mgt meetings 12 | 3h | 2011-04-06 | 2011-04-06 | 208.12d | start no earlier than 2011-04-06 |
| 14 | 1.13 | Mgt meetings 13 | 3h | 2011-04-20 | 2011-04-20 | 198.12d | start no earlier than 2011-04-20 |
| 15 | 1.14 | Mgt meetings 14 | 3h | 2011-05-04 | 2011-05-04 | 188.12d | start no earlier than 2011-05-04 |
| 16 | 1.15 | Mgt meetings 15 | 3h | 2011-05-18 | 2011-05-18 | 178.12d | start no earlier than 2011-05-18 |
| 17 | 1.16 | Mgt meetings 16 | 3h | 2011-06-01 | 2011-06-01 | 168.12d | start no earlier than 2011-06-01 |
| 18 | 1.17 | Mgt meetings 17 | 3h | 2011-06-15 | 2011-06-15 | 158.12d | start no earlier than 2011-06-15 |
| 19 | 1.18 | Mgt meetings 18 | 3h | 2011-06-29 | 2011-06-29 | 148.12d | start no earlier than 2011-06-29 |
| 20 | 1.19 | Mgt meetings 19 | 3h | 2011-07-13 | 2011-07-13 | 138.12d | start no earlier than 2011-07-13 |
| 21 | 1.20 | Mgt meetings 20 | 3h | 2011-07-27 | 2011-07-27 | 128.12d | start no earlier than 2011-07-27 |
| 22 | 1.21 | Mgt meetings 21 | 3h | 2011-08-10 | 2011-08-10 | 118.12d | start no earlier than 2011-08-10 |
| 23 | 1.22 | Mgt meetings 22 | 3h | 2011-08-24 | 2011-08-24 | 108.12d | start no earlier than 2011-08-24 |
| 24 | 1.23 | Mgt meetings 23 | 3h | 2011-09-07 | 2011-09-07 | 98.12d | start no earlier than 2011-09-07 |
| 25 | 1.24 | Mgt meetings 24 | 3h | 2011-09-21 | 2011-09-21 | 88.12d | start no earlier than 2011-09-21 |
| 26 | 1.25 | Mgt meetings 25 | 3h | 2011-10-05 | 2011-10-05 | 78.12d | start no earlier than 2011-10-05 |
| 27 | 1.26 | Mgt meetings 26 | 3h | 2011-10-19 | 2011-10-19 | 68.12d | start no earlier than 2011-10-19 |
| 28 | 1.27 | Mgt meetings 27 | 3h | 2011-11-02 | 2011-11-02 | 58.12d | start no earlier than 2011-11-02 |
| 29 | 1.28 | Mgt meetings 28 | 3h | 2011-11-16 | 2011-11-16 | 48.12d | start no earlier than 2011-11-16 |
| 30 | 1.29 | Mgt meetings 29 | 3h | 2011-11-30 | 2011-11-30 | 38.12d | start no earlier than 2011-11-30 |
| 31 | 1.30 | Mgt meetings 30 | 3h | 2011-12-14 | 2011-12-14 | 28.12d | start no earlier than 2011-12-14 |
| 32 | 1.31 | Mgt meetings 31 | 3h | 2011-12-28 | 2011-12-28 | 18.12d | start no earlier than 2011-12-28 |
| 33 | 1.32 | Mgt meetings 32 | 3h | 2012-01-11 | 2012-01-11 | 0d | start no earlier than 2012-01-11 |

| ID | WBS | Task | Type | Duration | Start | Finish | Predecessors | Total slack | Free slack | Resources | Work |
| --- | --- | --- | --- | --- | --- | --- | --- | --- | --- | --- | --- |
| 34 | 2 | **Planning Move** |  | 77.5d | 2010-11-01 | 2011-02-16 |  | 114.88d |  |  | 720h |
| 35 | 2.1 | **Document requirements** |  | 32.5d | 2010-11-01 | 2010-12-15 |  | 114.88d |  |  | 80h |
| 36 | 2.1.1 | Identify physical requirements |  | 30d | 2010-11-01 | 2010-12-10 |  | 114.88d | 0d |  |  |
| 37 | 2.1.2 | Draft the budget |  | 10d | 2010-12-01 | 2010-12-15 | 36FS-2.5% | 25d |  | Relo PM | 80h |
| 38 | 2.2 | **Choose new location** |  | 77.5d | 2010-11-01 | 2011-02-16 |  | 144.88d |  |  | 440h |
| 39 | 2.2.1 | **Evaluate build sites** |  | 0d | 2010-11-01 | 2010-11-01 |  | 312.38d |  |  |  |
| 40 | 2.2.1.1 | Identify potential build sites | inactive | 20d | 2010-11-01 | 2010-11-26 |  | 200.5d | 0d | Relo PM | 160h |
| 41 | 2.2.1.2 | Identify construction needs | inactive | 30d | 2010-11-29 | 2011-01-07 | 40 | 200.5d | 0d | Relo PM | 240h |
| 42 | 2.2.1.3 | Select site | inactive | 10d | 2011-01-10 | 2011-01-21 | 41 | 200.5d | 0d | Relo PM | 80h |
| 43 | 2.2.1.4 | Finalize purchase | inactive | 60d | 2011-01-24 | 2011-04-15 | 42 | 200.5d |  | Relo PM | 480h |
| 44 | 2.2.2 | **Evaluate lease sites** |  | 47.5d | 2010-12-13 | 2011-02-16 |  | 114.88d |  |  | 440h |
| 45 | 2.2.2.1 | Identify potential sites |  | 20d | 2010-12-13 | 2011-01-07 | 36 | 114.88d | 0d | Relo PM | 160h |
| 46 | 2.2.2.2 | Identify tenant improvements |  | 7.5d | 2011-01-10 | 2011-01-19 | 45 | 114.88d | 0d | Office manager; Relo PM | 120h |
| 47 | 2.2.2.3 | Select site |  | 10d | 2011-01-19 | 2011-02-02 | 46, 37 | 114.88d | 0d | Relo PM | 80h |
| 48 | 2.2.2.4 | Finalize lease |  | 10d | 2011-02-02 | 2011-02-16 | 47 | 114.88d | 0d | Relo PM | 80h |
| 49 | 2.3 | **Identify costs** |  | 20d | 2011-01-19 | 2011-02-16 |  | 114.88d |  |  | 160h |
| 50 | 2.3.1 | Obtain estimates for tenant improvements |  | 10d | 2011-01-19 | 2011-02-02 | 46 | 5d | 0d | Office manager | 80h |
| 51 | 2.3.2 | Identify additional costs (furniture, equipment) |  | 10d | 2011-02-02 | 2011-02-16 | 47 | 114.88d | 0d | Relo PM | 80h |
| 52 | 2.4 | Hire contractors for major tenant improvements |  | 5d | 2011-02-02 | 2011-02-09 | 50 | 5d |  | Relo PM | 40h |
| 53 | 2.5 | Planning complete | milestone | 0d | 2011-02-16 | 2011-02-16 | 45, 47, 48, 46, 51, 52 | 114.88d | 0d |  |  |
| 54 | 3 | **Construct and set up space** |  | 102d | 2011-02-16 | 2011-07-08 | 53 | 114.88d | 0d |  | 936h |
| 55 | 3.1 | **Prep phone system** |  | 5d | 2011-02-16 | 2011-02-23 | 53 | 207.88d |  |  | 40h |
| 56 | 3.1.1 | Review phone system requirements |  | 3d | 2011-02-16 | 2011-02-21 |  | 207.88d | 0d | Telecom admin | 24h |
| 57 | 3.1.2 | Order new phone numbers |  | 1d | 2011-02-21 | 2011-02-22 | 56 | 207.88d | 0d | Telecom admin | 8h |
| 58 | 3.1.3 | Order long-distance service |  | 1d | 2011-02-22 | 2011-02-23 | 57 | 207.88d | 0d | Telecom admin | 8h |
| 59 | 3.1.4 | Phone lines ordered | milestone | 0d | 2011-02-23 | 2011-02-23 | 58 | 220d |  |  |  |

| ID | WBS | Task | Type | Duration | Start | Finish | Predecessors | Total slack | Free slack | Resources | Work |
| --- | --- | --- | --- | --- | --- | --- | --- | --- | --- | --- | --- |
| 60 | 3.2 | **Design and construction** |  | 98d | 2011-02-16 | 2011-07-04 |  | 114.88d |  |  | 344h |
| 61 | 3.2.1 | **Design space** |  | 66d | 2011-02-16 | 2011-05-19 |  | 114.88d |  |  | 320h |
| 62 | 3.2.1.1 | Design office space |  | 25d | 2011-02-16 | 2011-03-23 | 53 | 114.88d | 0d | Office manager [50%]; Architect | 200h |
| 63 | 3.2.1.2 | Prepare drawings |  | 5d | 2011-03-23 | 2011-03-30 | 62 | 114.88d | 0d | Architect | 40h |
| 64 | 3.2.1.3 | Design IT infrastructure |  | 10d | 2011-03-30 | 2011-04-13 | 63 | 114.88d | 0d | Network mgr | 80h |
| 65 | 3.2.1.4 | Obtain final budget estimates |  | 10d | 2011-04-13 | 2011-04-27 | 64 | 114.88d | 0d |  |  |
| 66 | 3.2.1.5 | Sign off on plans |  | 1d | 2011-04-27 | 2011-04-28 | 65 | 114.88d | 0d |  |  |
| 67 | 3.2.1.6 | Obtain permits |  | 3w | 2011-04-28 | 2011-05-19 | 66 | 114.88d | 0d |  |  |
| 68 | 3.2.2 | **Construction** |  | 20d | 2011-05-19 | 2011-06-16 | 67 | 114.88d |  |  |  |
| 69 | 3.2.2.1 | Demolish walls |  | 5d | 2011-05-19 | 2011-05-26 |  | 114.88d | 0d |  |  |
| 70 | 3.2.2.2 | Construct new walls |  | 15d | 2011-05-26 | 2011-06-16 | 69 | 114.88d | 0d |  |  |
| 71 | 3.2.2.3 | Elec, mech, HVAC |  | 15d | 2011-05-26 | 2011-06-16 | 69 | 114.88d | 0d |  |  |
| 72 | 3.2.3 | **Walkthrough and repair** |  | 12d | 2011-06-16 | 2011-07-04 | 71, 70 | 114.88d |  |  | 24h |
| 73 | 3.2.3.1 | Repair issues |  | 5d | 2011-06-16 | 2011-06-23 |  | 114.88d | 0d |  |  |
| 74 | 3.2.3.2 | Schedule open house for employees |  | 1d | 2011-06-23 | 2011-06-24 | 73 | 123.88d | 5d | Relo PM; Office manager | 16h |
| 75 | 3.2.3.3 | Clean new office |  | 1d | 2011-06-23 | 2011-06-24 | 73 | 114.88d | 0d | Cleaning service | 8h |
| 76 | 3.2.3.4 | Construction complete | milestone | 0d | 2011-06-24 | 2011-06-24 | 75 | 132d | 0d |  |  |
| 77 | 3.2.3.5 | Open house |  | 1d | 2011-07-01 | 2011-07-04 | 76FS+5d, 74 | 118.88d |  |  |  |
| 78 | 3.3 | **Set up services** |  | 10d | 2011-04-13 | 2011-04-27 | 53FS+2mo | 166.88d | 52d |  | 200h |
| 79 | 3.3.1 | Order change of address labels |  | 1d | 2011-04-13 | 2011-04-14 |  | 175.88d |  | Mailroom | 8h |
| 80 | 3.3.2 | Obtain estimates from signage companies |  | 7d | 2011-04-13 | 2011-04-22 |  | 166.88d | 0d | Office manager | 56h |
| 81 | 3.3.3 | Order signage |  | 3d | 2011-04-22 | 2011-04-27 | 80 | 166.88d |  | Office manager | 24h |
| 82 | 3.3.4 | Arrange external maintenance |  | 5d | 2011-04-13 | 2011-04-20 |  | 171.88d |  | Office manager | 40h |
| 83 | 3.3.5 | Arrange for trash disposal |  | 1d | 2011-04-13 | 2011-04-14 |  | 175.88d |  | Office manager | 8h |
| 84 | 3.3.6 | Arrange for cleaning service |  | 1d | 2011-04-13 | 2011-04-14 |  | 175.88d |  | Office manager | 8h |
| 85 | 3.3.7 | Arrange for recycling |  | 1d | 2011-04-13 | 2011-04-14 |  | 175.88d |  | Office manager | 8h |
| 86 | 3.3.8 | Order security system |  | 2d | 2011-04-13 | 2011-04-15 |  | 174.88d |  | Office manager | 16h |
| 87 | 3.3.9 | Send change of address to vendors, customers, supscriptions |  | 1d | 2011-04-13 | 2011-04-14 |  | 175.88d |  | Mailroom | 8h |
| 88 | 3.3.10 | Notify all leasers of equipment move |  | 1d | 2011-04-13 | 2011-04-14 |  | 175.88d |  | Office manager | 8h |
| 89 | 3.3.11 | Order checks with new address |  | 1d | 2011-04-13 | 2011-04-14 |  | 175.88d |  | Office manager | 8h |
| 90 | 3.3.12 | Schedule disconnection of utilities |  | 1d | 2011-04-13 | 2011-04-14 |  | 175.88d | 70d | Office manager | 8h |

| ID | WBS | Task | Type | Duration | Start | Finish | Predecessors | Total slack | Free slack | Resources | Work |
| --- | --- | --- | --- | --- | --- | --- | --- | --- | --- | --- | --- |
| 91 | 3.4 | **Create office assignment layout** |  | 31d | 2011-02-16 | 2011-03-31 |  | 185.88d | 71d |  | 80h |
| 92 | 3.4.1 | Assign office spaces |  | 5d | 2011-03-23 | 2011-03-30 | 62 | 184.88d | 0d | Office manager | 40h |
| 93 | 3.4.2 | Assign new phone numbers, extensions |  | 2d | 2011-02-16 | 2011-02-18 |  | 212.88d | 0d | Telecom admin | 16h |
| 94 | 3.4.3 | Create new office extension directory |  | 1d | 2011-02-18 | 2011-02-21 | 93 | 212.88d | 0d | Telecommunications administrator | 8h |
| 95 | 3.4.4 | Create new office layout map |  | 1d | 2011-03-30 | 2011-03-31 | 92 | 184.88d | 0d | Office manager | 8h |
| 96 | 3.4.5 | Create new fax cover sheet |  | 1d | 2011-02-21 | 2011-02-22 | 94 | 212.88d |  | Office manager | 8h |
| 97 | 3.4.6 | Office plan complete | milestone | 0d | 2011-03-31 | 2011-03-31 | 95, 94 | 193d | 0d |  |  |
| 98 | 3.5 | **Order new stationery** |  | 1d | 2011-03-31 | 2011-04-01 | 97 | 184.88d |  |  | 56h |
| 99 | 3.5.1 | Order new letterhead and envelopes |  | 1d | 2011-03-31 | 2011-04-01 |  | 184.88d | 79d | Office manager | 8h |
| 100 | 3.5.2 | Order new business cards |  | 1d | 2011-03-31 | 2011-04-01 |  | 184.88d | 79d | Office manager | 8h |
| 101 | 3.5.3 | Order new business forms |  | 1d | 2011-03-31 | 2011-04-01 |  | 184.88d | 79d | Office manager | 8h |
| 102 | 3.5.4 | Get shipping labels |  | 1d | 2011-03-31 | 2011-04-01 |  | 184.88d |  | Mailroom administrator | 8h |
| 103 | 3.5.5 | Create map to location |  | 1d | 2011-03-31 | 2011-04-01 |  | 184.88d |  | Office manager | 8h |
| 104 | 3.5.6 | Notify post office of change of address |  | 1d | 2011-03-31 | 2011-04-01 |  | 184.88d | 79d | Mailroom | 8h |
| 105 | 3.5.7 | Update company website with new information |  | 1d | 2011-03-31 | 2011-04-01 |  | 184.88d | 79d | Webmaster | 8h |
| 106 | 3.6 | **Hire movers** |  | 13d | 2011-03-16 | 2011-04-04 | 53FS+1mo | 183.88d |  |  | 104h |
| 107 | 3.6.1 | Obtain estimates from moving companies |  | 12d | 2011-03-16 | 2011-04-01 |  | 183.88d | 0d | Relo PM | 96h |
| 108 | 3.6.2 | Choose moving company |  | 1d | 2011-04-01 | 2011-04-04 | 107 | 183.88d | 69d | Relo PM | 8h |
| 109 | 3.7 | **Obtain insurance** |  | 10d | 2011-06-24 | 2011-07-08 | 76 | 114.88d |  |  | 112h |
| 110 | 3.7.1 | Appraise assets |  | 3d | 2011-06-24 | 2011-06-29 |  | 114.88d | 0d | Accounting mgr | 24h |
| 111 | 3.7.2 | Obtain quotes for insurance |  | 6d | 2011-06-29 | 2011-07-07 | 110 | 114.88d | 0d | Office manager | 48h |
| 112 | 3.7.3 | Purchase insurance |  | 1d | 2011-07-07 | 2011-07-08 | 111 | 114.88d | 0d | Office manager | 8h |
| 113 | 3.7.4 | **Pre-move tasks** |  | 4d | 2011-06-24 | 2011-06-30 |  | 120.88d |  |  | 32h |
| 114 | 3.7.4.1 | Install phone system |  | 4d | 2011-06-24 | 2011-06-30 | 59 | 120.88d |  | Telecom admin | 32h |
| 115 | 4 | Construction and prep complete | milestone | 0d | 2011-07-08 | 2011-07-08 | 54, 108, 112, 91 | 114.88d | 0d |  |  |

| ID | WBS | Task | Type | Duration | Start | Finish | Predecessors | Total slack | Free slack | Resources | Work |
| --- | --- | --- | --- | --- | --- | --- | --- | --- | --- | --- | --- |
| 116 | 5 | **Move** |  | 9d | 2011-07-08 | 2011-07-21 | 115, 78 | 114.88d |  |  | 56h |
| 117 | 5.1 | Inventory office |  | 5d | 2011-07-08 | 2011-07-15 |  | 114.88d | 0d | Office manager | 40h |
| 118 | 5.2 | Distribute new keys, cards |  | 1d | 2011-07-08 | 2011-07-11 |  | 122.88d | 8d | Office manager | 8h |
| 119 | 5.3 | Collect old keys, cards |  | 1d | 2011-07-08 | 2011-07-11 |  | 118.88d | 4d | Office manager | 8h |
| 120 | 5.4 | Pack and move |  | 4d | 2011-07-15 | 2011-07-21 | 119, 117 | 114.88d | 0d |  |  |
| 121 | 5.5 | Move complete | milestone | 0d | 2011-07-21 | 2011-07-21 | 117, 118, 99, 100, 101, 104, 105, 90, 120 | 114.88d | 0d |  |  |
| 122 | 6 | **Post-Move** |  | 9d | 2011-07-21 | 2011-08-03 | 121 | 114.88d |  |  | 104h |
| 123 | 6.1 | Check for damage and missing items |  | 9d | 2011-07-21 | 2011-08-03 |  | 114.88d | 0d | Office manager | 72h |
| 124 | 6.2 | Schedule phone training |  | 1d | 2011-07-21 | 2011-07-22 |  | 122.88d | 8d | Telecom admin | 8h |
| 125 | 6.3 | Schedule security training |  | 1d | 2011-07-21 | 2011-07-22 |  | 122.88d | 8d | Office manager | 8h |
| 126 | 6.4 | Schedule fire drill |  | 1d | 2011-07-21 | 2011-07-22 |  | 122.88d | 8d | Office manager | 8h |
| 127 | 6.5 | Schedule open house for clients |  | 1d | 2011-07-21 | 2011-07-22 |  | 122.88d | 8d | Relo PM | 8h |
| 128 | 6.6 | Office move complete | milestone | 0d | 2011-08-03 | 2011-08-03 | 121, 123, 124, 125, 126, 127 | 114.88d |  |  |  |
