# Office Move

Schedule from MS Project, 2010-11-01 to 2012-01-26, costs in $, A marks actual dates.

## Calendars

- Standard: Mon-Fri 08:00-12:00, 13:00-17:00; Sat-Sun off.

## Resources

| Resource | Group | Unit | Rate |
| --- | --- | --- | --- |
| Relo PM |  |  | 90 |
| Office manager |  |  | 80 |
| Telecom admin |  |  | 70 |
| Network mgr |  |  | 80 |
| Mailroom |  |  | 40 |
| Accounting mgr |  |  | 90 |
| Phone company | External |  |  |
| Cleaning service | External |  | 40 |
| Webmaster |  |  | 70 |
| Movers | External |  | 50 |
| Architect | External |  | 90 |
| Lodging |  |  |  |
| Airfare |  |  |  |
| Mileage |  |  |  |
| Meals |  |  |  |
| System admin |  |  | 70 |
| Network admin |  |  | 75 |
| System mgr |  |  | 90 |
| Relo Assistant |  |  | 60 |
| Wine |  | Gallon | 6 |
| Brochure |  | Piece | 2.5 |
| Packet |  | Per | 1.2 |
| Keycard |  | Card | 3.75 |
| IT manager |  |  | 80 |

## Schedule

| ID | WBS | Task | Type | Duration | Start | Finish | Predecessors | Complete | Remaining | Baseline start | Baseline finish | Baseline duration | Total slack | Free slack | Resources | Work | Actual work | Cost | Baseline cost | Actual cost |
| --- | --- | --- | --- | --- | --- | --- | --- | --- | --- | --- | --- | --- | --- | --- | --- | --- | --- | --- | --- | --- |
| 1 | 1 | **Planning Move** |  | 91d | 2010-11-01 A | 2011-03-07 |  | 70% | 27.34d | 2010-11-01 | 2011-03-18 | 100d | 219d |  |  | 926h | 751h | 70,520 | 83,740 | 57,320 |
| 2 | 1.1 | **Document requirements** |  | 35d | 2010-11-01 A | 2010-12-17 A |  | 100% |  | 2010-11-01 | 2010-12-17 | 35d |  |  |  | 286h | 286h | 21,880 | 25,540 | 21,880 |
| 3 | 1.1.1 | Identify physical requirements |  | 17d | 2010-11-01 A | 2010-11-23 A |  | 100% |  | 2010-11-01 | 2010-11-26 | 20d |  |  | Relo PM [50%]; Relo Assistant [50%]; Office manager [50%] | 204h | 204h | 15,640 | 18,400 | 15,640 |
| 4 | 1.1.2 | Draft the budget |  | 9d | 2010-11-12 A | 2010-11-24 A | 3FS-2.5% | 100% |  | 2010-11-22 | 2010-12-03 | 10d |  |  | Relo PM [50%]; Relo Assistant [50%] | 72h | 72h | 5,400 | 6,000 | 5,400 |
| 5 | 1.1.3 | **Mgt meeting** |  | 6d | 2010-12-10 A | 2010-12-17 A |  | 100% |  | 2010-12-10 | 2010-12-17 | 6d |  |  |  | 10h | 10h | 840 | 1,140 | 840 |
| 6 | 1.1.3.1 | Prepare mgt presentation |  | 3d | 2010-12-10 A | 2010-12-14 A | 4 | 100% |  | 2010-12-10 | 2010-12-14 | 3d |  |  | Relo PM [25%] | 6h | 6h | 540 | 540 | 540 |
| 7 | 1.1.3.2 | Prepare materials |  | 1d | 2010-12-15 A | 2010-12-15 A | 6 | 100% |  | 2010-12-15 | 2010-12-16 | 2d |  |  | Relo Assistant [25%]; Relo PM [25%] | 4h | 4h | 300 | 600 | 300 |
| 8 | 1.1.3.3 | Present to mgt | manual | 4h | 2010-12-17 A | 2010-12-17 A | 7 | 100% |  | 2010-12-17 | 2010-12-17 | 4h |  |  |  |  |  |  |  |  |
| 9 | 1.2 | **Choose new location** |  | 56d | 2010-11-29 A | 2011-02-14 |  | 88% | 6.51d | 2010-12-06 | 2011-03-04 | 65d | 9d |  |  | 312h | 272h | 25,080 | 30,600 | 21,480 |
| 10 | 1.2.1 | **Evaluate build sites** | inactive | 138d | 2010-11-01 | 2011-05-11 |  |  |  |  |  |  | -53d | 0d |  | 1000h |  | 90,000 | -0 |  |
| 11 | 1.2.1.1 | Identify potential build sites | inactive | 25d | 2010-11-01 | 2010-12-03 |  |  |  |  |  |  | -53d | 0d | Relo PM | 200h |  | 18,000 | -0 |  |
| 12 | 1.2.1.2 | Identify construction needs | inactive | 30d | 2010-12-06 | 2011-02-02 | 11 |  |  |  |  |  | -66d | 0d | Relo PM | 240h |  | 21,600 | -0 |  |
| 13 | 1.2.1.3 | Select site | inactive | 10d | 2011-02-03 | 2011-02-16 | 12 |  |  |  |  |  | -66d | 0d | Relo PM | 80h |  | 7,200 | -0 |  |
| 14 | 1.2.1.4 | Finalize purchase | inactive | 60d | 2011-02-17 | 2011-05-11 | 13 |  |  |  |  |  | -66d | 0d | Relo PM | 480h |  | 43,200 | -0 |  |
| 15 | 1.2.2 | **Evaluate lease sites** |  | 56d | 2010-11-29 A | 2011-02-14 |  | 88% | 6.51d | 2010-12-06 | 2011-03-04 | 65d | 9d |  |  | 312h | 272h | 25,080 | 30,600 | 21,480 |
| 16 | 1.2.2.1 | Identify potential sites |  | 20d | 2010-11-29 A | 2011-01-05 A | 4 | 100% |  | 2010-12-06 | 2011-01-19 | 25d |  |  | Relo PM [50%]; Relo Assistant [50%] | 140h | 140h | 10,440 | 12,000 | 10,440 |
| 17 | 1.2.2.2 | Identify tenant improvements |  | 8d | 2011-01-06 A | 2011-01-17 A | 16 | 100% |  | 2011-01-20 | 2011-01-28 | 7d |  |  | Relo PM [50%]; Relo Assistant [50%] | 52h | 52h | 3,840 | 4,200 | 3,840 |
| 18 | 1.2.2.3 | Select site |  | 5d | 2011-01-18 A | 2011-01-24 A | 17, 4 | 100% |  | 2011-01-31 | 2011-02-11 | 10d |  |  | Relo PM | 40h | 40h | 3,600 | 7,200 | 3,600 |
| 19 | 1.2.2.4 | Finalize lease |  | 10d | 2011-01-25 A | 2011-02-14 | 18 | 50% | 5d | 2011-02-14 | 2011-03-04 | 10d | 9d |  | Relo PM | 80h | 40h | 7,200 | 7,200 | 3,600 |
| 20 | 1.3 | **Identify costs** |  | 43d | 2011-01-06 A | 2011-03-07 |  | 36% | 27.38d | 2011-01-20 | 2011-03-18 | 42d | 219d |  |  | 308h | 173h | 21,760 | 24,000 | 12,160 |
| 21 | 1.3.1 | Estimate costs for tenant improvements |  | 8d | 2011-01-18 A | 2011-01-27 A | 17 | 100% |  | 2011-01-31 | 2011-02-11 | 10d |  |  | Office manager; Relo Assistant | 128h | 128h | 8,960 | 11,200 | 8,960 |
| 22 | 1.3.2 | Identify addl costs (furniture, equipment) |  | 20d | 2011-01-06 A | 2011-02-25 | 16 | 25% | 15d | 2011-01-20 | 2011-03-11 | 20d | 0d |  | Relo Assistant [50%] | 80h | 20h | 4,800 | 4,800 | 1,200 |
| 23 | 1.3.3 | Inventory office |  | 25d | 2011-01-18 A | 2011-03-07 | 17 | 25% | 18.75d | 2011-01-31 | 2011-03-18 | 25d | 219d |  | Office manager [50%] | 100h | 25h | 8,000 | 8,000 | 2,000 |
| 24 | 1.4 | Planning complete | milestone | 0d | 2011-02-25 | 2011-02-25 | 16, 18, 19, 17, 22, 14 |  |  | 2011-03-11 | 2011-03-11 | 0d | 0d |  |  |  |  |  |  |  |
| 25 | 1.5 | Hire contractors for tenant improvements |  | 2.5d | 2011-01-28 A | 2011-02-03 A | 21 | 100% |  | 2011-02-14 | 2011-02-18 | 5d |  |  | Relo PM | 20h | 20h | 1,800 | 3,600 | 1,800 |

| ID | WBS | Task | Type | Duration | Start | Finish | Predecessors | Baseline start | Baseline finish | Baseline duration | Total slack | Free slack | Constraint | Resources | Work | Cost | Baseline cost |
| --- | --- | --- | --- | --- | --- | --- | --- | --- | --- | --- | --- | --- | --- | --- | --- | --- | --- |
| 26 | 2 | **Prep phone system** |  | 225d | 2011-02-28 | 2012-01-06 | 24 | 2011-03-14 | 2012-01-20 | 225d | 14d |  |  |  | 723h | 59,020 | 59,020 |
| 27 | 2.1 | Review phone system requirements |  | 3d | 2011-02-28 | 2011-03-02 |  | 2011-03-14 | 2011-03-16 | 3d | 230d | 0d |  | Telecom admin | 24h | 1,680 | 1,680 |
| 28 | 2.2 | Order new phone numbers |  | 1d | 2011-03-03 | 2011-03-03 | 27 | 2011-03-17 | 2011-03-17 | 1d | 230d | 0d |  | Telecom admin | 8h | 560 | 560 |
| 29 | 2.3 | Order long-distance service |  | 1d | 2011-03-04 | 2011-03-04 | 28 | 2011-03-18 | 2011-03-18 | 1d | 230d | 0d |  | Telecom admin | 8h | 560 | 560 |
| 30 | 2.4 | Phone lines ordered | milestone | 0d | 2011-03-04 | 2011-03-04 | 29 | 2011-03-18 | 2011-03-18 | 0d | 230d | 220d |  |  |  |  |  |
| 31 | 2.5 | **Design and construction** |  | 81.75d | 2011-02-28 | 2011-06-21 |  | 2011-03-14 | 2011-07-05 | 81.75d | 148.25d |  |  |  | 254h | 21,580 | 21,580 |
| 32 | 2.5.1 | **Design space** |  | 54.75d | 2011-02-28 | 2011-05-13 |  | 2011-03-14 | 2011-05-27 | 54.75d | 148.25d |  |  |  | 230h | 19,900 | 19,900 |
| 33 | 2.5.1.1 | Design office space |  | 13.75d | 2011-02-28 | 2011-03-17 | 24 | 2011-03-14 | 2011-03-31 | 13.75d | 148.25d | 0d |  | Architect | 110h | 9,900 | 9,900 |
| 34 | 2.5.1.2 | Prepare drawings |  | 5d | 2011-03-17 | 2011-03-24 | 33 | 2011-03-31 | 2011-04-07 | 5d | 148.25d | 0d |  | Architect | 40h | 3,600 | 3,600 |
| 35 | 2.5.1.3 | Design IT infrastructure |  | 10d | 2011-03-24 | 2011-04-07 | 34 | 2011-04-07 | 2011-04-21 | 10d | 148.25d | 0d |  | Network mgr | 80h | 6,400 | 6,400 |
| 36 | 2.5.1.4 | Obtain final budget estimates |  | 10d | 2011-04-07 | 2011-04-21 | 35 | 2011-04-21 | 2011-05-05 | 10d | 148.25d | 0d |  |  |  |  |  |
| 37 | 2.5.1.5 | Sign off on plans |  | 1d | 2011-04-21 | 2011-04-22 | 36 | 2011-05-05 | 2011-05-06 | 1d | 148.25d | 0d |  |  |  |  |  |
| 38 | 2.5.1.6 | Obtain permits |  | 3w | 2011-04-22 | 2011-05-13 | 37 | 2011-05-06 | 2011-05-27 | 3w | 148.25d | 0d |  |  |  |  |  |
| 39 | 2.5.2 | **Construction** |  | 20d | 2011-05-13 | 2011-06-10 | 38 | 2011-05-27 | 2011-06-24 | 20d | 148.25d |  |  |  |  |  |  |
| 40 | 2.5.2.1 | Demolish walls |  | 5d | 2011-05-13 | 2011-05-20 | 25 | 2011-05-27 | 2011-06-03 | 5d | 148.25d | 0d |  |  |  |  |  |
| 41 | 2.5.2.2 | Construct new walls |  | 15d | 2011-05-20 | 2011-06-10 | 40 | 2011-06-03 | 2011-06-24 | 15d | 148.25d | 0d |  |  |  |  |  |
| 42 | 2.5.2.3 | Elec, mech, HVAC |  | 15d | 2011-05-20 | 2011-06-10 | 40 | 2011-06-03 | 2011-06-24 | 15d | 148.25d | 0d |  |  |  |  |  |
| 43 | 2.5.3 | **Walkthrough and repair** |  | 7d | 2011-06-10 | 2011-06-21 | 42, 41 | 2011-06-24 | 2011-07-05 | 7d | 148.25d |  |  |  | 24h | 1,680 | 1,680 |
| 44 | 2.5.3.1 | Repair issues |  | 5d | 2011-06-10 | 2011-06-17 |  | 2011-06-24 | 2011-07-01 | 5d | 148.25d | 0d |  |  |  |  |  |
| 45 | 2.5.3.2 | Schedule open house for employees |  | 1d | 2011-06-10 | 2011-06-13 |  | 2011-06-24 | 2011-06-27 | 1d | 163.25d |  |  | Relo PM; Office manager | 16h | 1,360 | 1,360 |
| 46 | 2.5.3.3 | Clean new office |  | 1d | 2011-06-17 | 2011-06-20 | 44 | 2011-07-01 | 2011-07-04 | 1d | 148.25d | 0d |  | Cleaning service | 8h | 320 | 320 |
| 47 | 2.5.3.4 | Construction complete | milestone | 0d | 2011-06-20 | 2011-06-20 | 46 | 2011-07-04 | 2011-07-04 | 0d | 157.25d | 0d |  |  |  |  |  |
| 48 | 2.5.3.5 | Open house |  | 1d | 2011-06-20 | 2011-06-21 | 47 | 2011-07-04 | 2011-07-05 | 1d | 157.25d |  |  |  |  |  |  |
| 49 | 2.6 | **Set up services** |  | 10d | 2011-04-25 | 2011-05-06 | 24FS+2mo | 2011-05-09 | 2011-05-20 | 10d | 0d |  |  |  | 200h | 15,360 | 15,360 |
| 50 | 2.6.1 | Order change of address labels |  | 1d | 2011-04-25 | 2011-04-25 |  | 2011-05-09 | 2011-05-09 | 1d | 9d |  |  | Mailroom | 8h | 320 | 320 |
| 51 | 2.6.2 | Obtain estimates from signage companies |  | 7d | 2011-04-25 | 2011-05-03 |  | 2011-05-09 | 2011-05-17 | 7d | 0d |  |  | Office manager | 56h | 4,480 | 4,480 |
| 52 | 2.6.3 | Order signage |  | 3d | 2011-05-04 | 2011-05-06 | 51 | 2011-05-18 | 2011-05-20 | 3d | 0d |  |  | Office manager | 24h | 1,920 | 1,920 |
| 53 | 2.6.4 | Arrange external maintenance |  | 5d | 2011-04-25 | 2011-04-29 |  | 2011-05-09 | 2011-05-13 | 5d | 5d |  |  | Office manager | 40h | 3,200 | 3,200 |
| 54 | 2.6.5 | Arrange for trash disposal |  | 1d | 2011-04-25 | 2011-04-25 |  | 2011-05-09 | 2011-05-09 | 1d | 9d |  |  | Office manager | 8h | 640 | 640 |
| 55 | 2.6.6 | Arrange for cleaning service |  | 1d | 2011-04-25 | 2011-04-25 |  | 2011-05-09 | 2011-05-09 | 1d | 9d |  |  | Office manager | 8h | 640 | 640 |
| 56 | 2.6.7 | Arrange for recycling |  | 1d | 2011-04-25 | 2011-04-25 |  | 2011-05-09 | 2011-05-09 | 1d | 9d |  |  | Office manager | 8h | 640 | 640 |
| 57 | 2.6.8 | Order security system |  | 2d | 2011-04-25 | 2011-04-26 |  | 2011-05-09 | 2011-05-10 | 2d | 8d |  |  | Office manager | 16h | 1,280 | 1,280 |
| 58 | 2.6.9 | Send change of address to vendors, customers, supscriptions |  | 1d | 2011-04-25 | 2011-04-25 |  | 2011-05-09 | 2011-05-09 | 1d | 9d |  |  | Mailroom | 8h | 320 | 320 |
| 59 | 2.6.10 | Notify all leasers of equipment move |  | 1d | 2011-04-25 | 2011-04-25 |  | 2011-05-09 | 2011-05-09 | 1d | 9d |  |  | Office manager | 8h | 640 | 640 |
| 60 | 2.6.11 | Order checks with new address |  | 1d | 2011-04-25 | 2011-04-25 |  | 2011-05-09 | 2011-05-09 | 1d | 9d |  |  | Office manager | 8h | 640 | 640 |
| 61 | 2.6.12 | Schedule disconnection of utilities |  | 1d | 2011-04-25 | 2011-04-25 |  | 2011-05-09 | 2011-05-09 | 1d | 9d |  |  | Office manager | 8h | 640 | 640 |
| 62 | 2.7 | Service setup complete | milestone | 0d | 2011-05-06 | 2012-01-06 | 49 | 2011-05-20 | 2012-01-20 | 0d | 0d |  | start no earlier than 2010-09-20 |  |  |  |  |

| ID | WBS | Task | Type | Duration | Start | Finish | Predecessors | Baseline start | Baseline finish | Baseline duration | Total slack | Free slack | Resources | Work | Cost | Baseline cost |
| --- | --- | --- | --- | --- | --- | --- | --- | --- | --- | --- | --- | --- | --- | --- | --- | --- |
| 63 | 2.8 | **Create office assignment layout** |  | 8.12d | 2011-03-17 | 2011-03-29 |  | 2011-03-31 | 2011-04-12 | 8.12d | 203.12d |  |  | 65h | 5,040 | 5,040 |
| 64 | 2.8.1 | Assign office spaces |  | 5d | 2011-03-17 | 2011-03-24 | 33 | 2011-03-31 | 2011-04-07 | 5d | 203.12d | 0d | Office manager | 40h | 3,200 | 3,200 |
| 65 | 2.8.2 | Assign new phone numbers, extensions |  | 2d | 2011-03-24 | 2011-03-28 | 64 | 2011-04-07 | 2011-04-11 | 2d | 203.12d | 0d | Telecom admin | 16h | 1,120 | 1,120 |
| 66 | 2.8.3 | Create new office extension directory |  | 1d | 2011-03-28 | 2011-03-29 | 65 | 2011-04-11 | 2011-04-12 | 1d | 203.12d | 0d |  |  |  |  |
| 67 | 2.8.4 | Create new office layout map |  | 1d | 2011-03-24 | 2011-03-25 | 64 | 2011-04-07 | 2011-04-08 | 1d | 205.25d | 2.12d | Office manager | 8h | 640 | 640 |
| 68 | 2.8.5 | Create new fax cover sheet |  | 0.12d | 2011-03-29 | 2011-03-29 | 66 | 2011-04-12 | 2011-04-12 | 0.12d | 203.12d | 0d | Office manager | 1h | 80 | 80 |
| 69 | 2.8.6 | Office plan complete | milestone | 0d | 2011-03-29 | 2011-03-29 | 67, 66, 68 | 2011-04-12 | 2011-04-12 | 0d | 203.12d | 0d |  |  |  |  |
| 70 | 2.9 | **Order new stationery** |  | 1.5d | 2011-03-29 | 2011-03-31 | 69 | 2011-04-12 | 2011-04-14 | 1.5d | 205.62d |  |  | 20h | 1,440 | 1,440 |
| 71 | 2.9.1 | Order new letterhead and envelopes |  | 0.25d | 2011-03-29 | 2011-03-30 |  | 2011-04-12 | 2011-04-13 | 0.25d | 205.62d | 0d | Office manager | 2h | 160 | 160 |
| 72 | 2.9.2 | Order new business cards |  | 0.25d | 2011-03-30 | 2011-03-30 | 71 | 2011-04-13 | 2011-04-13 | 0.25d | 205.62d | 0d | Office manager | 2h | 160 | 160 |
| 73 | 2.9.3 | Order new business forms |  | 0.25d | 2011-03-30 | 2011-03-30 | 72 | 2011-04-13 | 2011-04-13 | 0.25d | 205.62d | 0d | Office manager | 2h | 160 | 160 |
| 74 | 2.9.4 | Get shipping labels |  | 0.25d | 2011-03-30 | 2011-03-30 | 73 | 2011-04-13 | 2011-04-13 | 0.25d | 205.62d | 0d | Office manager | 2h | 160 | 160 |
| 75 | 2.9.5 | Create map to location |  | 0.25d | 2011-03-30 | 2011-03-31 | 74 | 2011-04-13 | 2011-04-14 | 0.25d | 205.62d | 0d | Office manager | 2h | 160 | 160 |
| 76 | 2.9.6 | Notify post office of change of address |  | 0.25d | 2011-03-31 | 2011-03-31 | 75 | 2011-04-14 | 2011-04-14 | 0.25d | 205.62d |  | Mailroom | 2h | 80 | 80 |
| 77 | 2.9.7 | Update company website with new information |  | 1d | 2011-03-29 | 2011-03-30 |  | 2011-04-12 | 2011-04-13 | 1d | 206.12d |  | Webmaster | 8h | 560 | 560 |
| 78 | 2.10 | **Hire movers** |  | 13d | 2011-03-28 | 2011-04-13 | 24FS+1mo | 2011-04-11 | 2011-04-27 | 13d | 192d |  |  | 104h | 9,360 | 9,360 |
| 79 | 2.10.1 | Obtain estimates from moving companies |  | 12d | 2011-03-28 | 2011-04-12 |  | 2011-04-11 | 2011-04-26 | 12d | 192d | 0d | Relo PM | 96h | 8,640 | 8,640 |
| 80 | 2.10.2 | Choose moving company |  | 1d | 2011-04-13 | 2011-04-13 | 79 | 2011-04-27 | 2011-04-27 | 1d | 192d |  | Relo PM | 8h | 720 | 720 |
| 81 | 2.11 | **Obtain insurance** |  | 13d | 2011-02-28 | 2011-03-16 |  | 2011-03-14 | 2011-03-30 | 13d | 212d |  |  | 40h | 3,440 | 3,440 |
| 82 | 2.11.1 | Appraise assets |  | 3d | 2011-02-28 | 2011-03-02 |  | 2011-03-14 | 2011-03-16 | 3d | 212d | 0d | Accounting mgr | 24h | 2,160 | 2,160 |
| 83 | 2.11.2 | Obtain quotes for insurance |  | 1d | 2011-03-03 | 2011-03-15 | 82 | 2011-03-17 | 2011-03-29 | 1d | 212d | 0d | Office manager | 8h | 640 | 640 |
| 84 | 2.11.3 | Purchase insurance |  | 1d | 2011-03-16 | 2011-03-16 | 83 | 2011-03-30 | 2011-03-30 | 1d | 212d |  | Office manager | 8h | 640 | 640 |
| 85 | 3 | Construction and prep complete | milestone | 0d | 2012-01-06 | 2012-01-06 | 62, 80, 84, 63 | 2012-01-20 | 2012-01-20 | 0d | 0d |  |  |  |  |  |
| 86 | 4 | **Move** |  | 4d | 2012-01-09 | 2012-01-12 | 85 | 2012-01-23 | 2012-01-26 | 4d | 0d |  |  | 8h | 640 | 640 |
| 87 | 4.1 | Distribute new keys, cards |  | 1d | 2012-01-09 | 2012-01-09 |  | 2012-01-23 | 2012-01-23 | 1d | 3d |  | Office manager | 8h | 640 | 640 |
| 88 | 4.2 | Pack and move |  | 4d | 2012-01-09 | 2012-01-12 | 23 | 2012-01-23 | 2012-01-26 | 4d | 0d |  |  |  |  |  |
| 89 | 4.3 | Move complete | milestone | 0d | 2012-01-12 | 2012-01-12 | 65, 87, 71, 72, 73, 44, 46, 76, 77, 61, 88, 23 | 2012-01-26 | 2012-01-26 | 0d | 0d |  |  |  |  |  |

| ID | WBS | Task | Type | Duration | Start | Finish | Predecessors | Baseline start | Baseline finish | Baseline duration | Total slack | Resources | Work | Cost | Baseline cost |
| --- | --- | --- | --- | --- | --- | --- | --- | --- | --- | --- | --- | --- | --- | --- | --- |
| 90 | 5 | **Pre-move tasks** |  | 4d | 2012-01-09 | 2012-01-12 | 86SS | 2012-01-23 | 2012-01-26 | 4d | 10d |  | 32h | 2,240 | 2,240 |
| 91 | 5.1 | Install phone system |  | 4d | 2012-01-09 | 2012-01-12 | 30 | 2012-01-23 | 2012-01-26 | 4d | 10d | Telecom admin | 32h | 2,240 | 2,240 |
| 92 | 6 | **Post-Move** |  | 10d | 2012-01-13 | 2012-01-26 | 89 | 2012-01-27 | 2012-02-09 | 10d | 0d |  | 96h | 6,960 | 6,960 |
| 93 | 6.1 | Check for damage and missing items |  | 10d | 2012-01-13 | 2012-01-26 |  | 2012-01-27 | 2012-02-09 | 10d | 0d | Office manager [50%]; Relo Assistant [50%] | 72h | 5,040 | 5,040 |
| 94 | 6.2 | Schedule phone training |  | 1d | 2012-01-13 | 2012-01-13 |  | 2012-01-27 | 2012-01-27 | 1d | 9d | Telecom admin | 8h | 560 | 560 |
| 95 | 6.3 | Schedule security training |  | 1d | 2012-01-13 | 2012-01-13 |  | 2012-01-27 | 2012-01-27 | 1d | 9d | Office manager [50%] | 4h | 320 | 320 |
| 96 | 6.4 | Schedule fire drill |  | 1d | 2012-01-13 | 2012-01-13 |  | 2012-01-27 | 2012-01-27 | 1d | 9d | Office manager [50%] | 4h | 320 | 320 |
| 97 | 6.5 | Schedule open house for clients |  | 1d | 2012-01-13 | 2012-01-13 |  | 2012-01-27 | 2012-01-27 | 1d | 9d | Relo PM | 8h | 720 | 720 |
| 98 | 6.6 | Office move complete | milestone | 0d | 2012-01-26 | 2012-01-26 | 89, 93, 94, 95, 96, 97 | 2012-02-09 | 2012-02-09 | 0d | 0d |  |  |  |  |
