# Office Move

Schedule from MS Project, 2010-11-01 to 2012-01-11.

## Calendars

- Standard: Mon-Fri 08:00-12:00, 13:00-17:00; Sat-Sun off.

## Resources

| Resource |
| --- |
| Relo PM |
| Office manager |
| Telecom admin |
| Network mgr |
| Mailroom |
| Accounting mgr |
| Local phone company |
| Cleaning service |
| Webmaster |
| Movers |
| Telecommunications administrator |
| Mailroom administrator |
| Architect |
| CEO |
| CFO |
| CIO |

## Schedule

| ID | WBS | Task | Duration | Start | Finish | Total slack | Constraint |
| --- | --- | --- | --- | --- | --- | --- | --- |
| 1 | 1 | **Mgt meetings** | 310.38d | 2010-11-03 08:00 | 2012-01-11 11:00 | 0d |  |
| 2 | 1.1 | Mgt meetings 1 | 3h | 2010-11-03 08:00 | 2010-11-03 11:00 | 318.12d | start no earlier than 2010-11-03 08:00 |
| 3 | 1.2 | Mgt meetings 2 | 3h | 2010-11-17 08:00 | 2010-11-17 11:00 | 308.12d | start no earlier than 2010-11-17 08:00 |
| 4 | 1.3 | Mgt meetings 3 | 3h | 2010-12-01 08:00 | 2010-12-01 11:00 | 298.12d | start no earlier than 2010-12-01 08:00 |
| 5 | 1.4 | Mgt meetings 4 | 3h | 2010-12-15 08:00 | 2010-12-15 11:00 | 288.12d | start no earlier than 2010-12-15 08:00 |
| 6 | 1.5 | Mgt meetings 5 | 3h | 2010-12-29 08:00 | 2010-12-29 11:00 | 278.12d | start no earlier than 2010-12-29 08:00 |
| 7 | 1.6 | Mgt meetings 6 | 3h | 2011-01-12 08:00 | 2011-01-12 11:00 | 268.12d | start no earlier than 2011-01-12 08:00 |
| 8 | 1.7 | Mgt meetings 7 | 3h | 2011-01-26 08:00 | 2011-01-26 11:00 | 258.12d | start no earlier than 2011-01-26 08:00 |
| 9 | 1.8 | Mgt meetings 8 | 3h | 2011-02-09 08:00 | 2011-02-09 11:00 | 248.12d | start no earlier than 2011-02-09 08:00 |
| 10 | 1.9 | Mgt meetings 9 | 3h | 2011-02-23 08:00 | 2011-02-23 11:00 | 238.12d | start no earlier than 2011-02-23 08:00 |
| 11 | 1.10 | Mgt meetings 10 | 3h | 2011-03-09 08:00 | 2011-03-09 11:00 | 228.12d | start no earlier than 2011-03-09 08:00 |
| 12 | 1.11 | Mgt meetings 11 | 3h | 2011-03-23 08:00 | 2011-03-23 11:00 | 218.12d | start no earlier than 2011-03-23 08:00 |
| 13 | 1.12 | Mgt meetings 12 | 3h | 2011-04-06 08:00 | 2011-04-06 11:00 | 208.12d | start no earlier than 2011-04-06 08:00 |
| 14 | 1.13 | Mgt meetings 13 | 3h | 2011-04-20 08:00 | 2011-04-20 11:00 | 198.12d | start no earlier than 2011-04-20 08:00 |
| 15 | 1.14 | Mgt meetings 14 | 3h | 2011-05-04 08:00 | 2011-05-04 11:00 | 188.12d | start no earlier than 2011-05-04 08:00 |
| 16 | 1.15 | Mgt meetings 15 | 3h | 2011-05-18 08:00 | 2011-05-18 11:00 | 178.12d | start no earlier than 2011-05-18 08:00 |
| 17 | 1.16 | Mgt meetings 16 | 3h | 2011-06-01 08:00 | 2011-06-01 11:00 | 168.12d | start no earlier than 2011-06-01 08:00 |
| 18 | 1.17 | Mgt meetings 17 | 3h | 2011-06-15 08:00 | 2011-06-15 11:00 | 158.12d | start no earlier than 2011-06-15 08:00 |
| 19 | 1.18 | Mgt meetings 18 | 3h | 2011-06-29 08:00 | 2011-06-29 11:00 | 148.12d | start no earlier than 2011-06-29 08:00 |
| 20 | 1.19 | Mgt meetings 19 | 3h | 2011-07-13 08:00 | 2011-07-13 11:00 | 138.12d | start no earlier than 2011-07-13 08:00 |
| 21 | 1.20 | Mgt meetings 20 | 3h | 2011-07-27 08:00 | 2011-07-27 11:00 | 128.12d | start no earlier than 2011-07-27 08:00 |
| 22 | 1.21 | Mgt meetings 21 | 3h | 2011-08-10 08:00 | 2011-08-10 11:00 | 118.12d | start no earlier than 2011-08-10 08:00 |
| 23 | 1.22 | Mgt meetings 22 | 3h | 2011-08-24 08:00 | 2011-08-24 11:00 | 108.12d | start no earlier than 2011-08-24 08:00 |
| 24 | 1.23 | Mgt meetings 23 | 3h | 2011-09-07 08:00 | 2011-09-07 11:00 | 98.12d | start no earlier than 2011-09-07 08:00 |
| 25 | 1.24 | Mgt meetings 24 | 3h | 2011-09-21 08:00 | 2011-09-21 11:00 | 88.12d | start no earlier than 2011-09-21 08:00 |
| 26 | 1.25 | Mgt meetings 25 | 3h | 2011-10-05 08:00 | 2011-10-05 11:00 | 78.12d | start no earlier than 2011-10-05 08:00 |
| 27 | 1.26 | Mgt meetings 26 | 3h | 2011-10-19 08:00 | 2011-10-19 11:00 | 68.12d | start no earlier than 2011-10-19 08:00 |
| 28 | 1.27 | Mgt meetings 27 | 3h | 2011-11-02 08:00 | 2011-11-02 11:00 | 58.12d | start no earlier than 2011-11-02 08:00 |
| 29 | 1.28 | Mgt meetings 28 | 3h | 2011-11-16 08:00 | 2011-11-16 11:00 | 48.12d | start no earlier than 2011-11-16 08:00 |
| 30 | 1.29 | Mgt meetings 29 | 3h | 2011-11-30 08:00 | 2011-11-30 11:00 | 38.12d | start no earlier than 2011-11-30 08:00 |
| 31 | 1.30 | Mgt meetings 30 | 3h | 2011-12-14 08:00 | 2011-12-14 11:00 | 28.12d | start no earlier than 2011-12-14 08:00 |
| 32 | 1.31 | Mgt meetings 31 | 3h | 2011-12-28 08:00 | 2011-12-28 11:00 | 18.12d | start no earlier than 2011-12-28 08:00 |
| 33 | 1.32 | Mgt meetings 32 | 3h | 2012-01-11 08:00 | 2012-01-11 11:00 | 0d | start no earlier than 2012-01-11 08:00 |

| ID | WBS | Task | Type | Duration | Start | Finish | Predecessors | Total slack | Free slack | Resources | Work |
| --- | --- | --- | --- | --- | --- | --- | --- | --- | --- | --- | --- |
| 34 | 2 | **Planning Move** |  | 58d | 2010-11-01 08:00 | 2011-01-19 17:00 |  | 11.38d |  |  | 764h |
| 35 | 2.1 | **Document requirements** |  | 12.5d | 2010-11-01 08:00 | 2010-11-17 12:00 |  | 11.38d |  |  | 120h |
| 36 | 2.1.1 | Identify physical requirements |  | 10d | 2010-11-01 08:00 | 2010-11-12 17:00 |  | 11.38d | 0d | Relo PM | 80h |
| 37 | 2.1.2 | Draft the budget |  | 5d | 2010-11-10 13:00 | 2010-11-17 12:00 | 36FS-2.5% | 36.38d | 25d | Relo PM | 40h |
| 38 | 2.2 | **Choose new location** |  | 58d | 2010-11-01 08:00 | 2011-01-19 17:00 |  | 21.38d |  |  | 444h |
| 39 | 2.2.1 | **Evaluate build sites** |  | 0d | 2010-11-01 08:00 | 2010-11-01 08:00 |  | 320.5d |  |  |  |
| 40 | 2.2.1.1 | Identify potential build sites | inactive | 20d | 2010-11-01 08:00 | 2010-11-26 17:00 |  | 200.5d | 0d | Relo PM | 160h |
| 41 | 2.2.1.2 | Identify construction needs | inactive | 30d | 2010-11-29 08:00 | 2011-01-07 17:00 | 40 | 200.5d | 0d | Relo PM | 240h |
| 42 | 2.2.1.3 | Select site | inactive | 10d | 2011-01-10 08:00 | 2011-01-21 17:00 | 41 | 200.5d | 0d | Relo PM | 80h |
| 43 | 2.2.1.4 | Finalize purchase | inactive | 60d | 2011-01-24 08:00 | 2011-04-15 17:00 | 42 | 200.5d |  | Relo PM | 480h |
| 44 | 2.2.2 | **Evaluate lease sites** |  | 48d | 2010-11-15 08:00 | 2011-01-19 17:00 |  | 11.38d |  |  | 444h |
| 45 | 2.2.2.1 | Identify potential sites |  | 20d | 2010-11-15 08:00 | 2010-12-10 17:00 | 36 | 11.38d | 0d | Relo PM | 160h |
| 46 | 2.2.2.2 | Identify tenant improvements |  | 7.5d | 2010-12-13 08:00 | 2010-12-22 12:00 | 45 | 11.38d | 0d | Office manager; Relo PM | 120h |
| 47 | 2.2.2.3 | Select site |  | 10d | 2010-12-22 13:00 | 2011-01-05 12:00 | 46, 37 | 11.38d | 0d | Relo PM | 80h |
| 48 | 2.2.2.4 | Present selection to mgt |  | 4h | 2011-01-05 13:00 | 2011-01-05 17:00 | 47 | 11.38d | 0d | Relo PM | 4h |
| 49 | 2.2.2.5 | Finalize lease |  | 10d | 2011-01-06 08:00 | 2011-01-19 17:00 | 47, 48 | 11.38d | 0d | Relo PM | 80h |
| 50 | 2.3 | **Identify costs** |  | 20d | 2010-12-22 13:00 | 2011-01-19 12:00 |  | 11.88d |  |  | 160h |
| 51 | 2.3.1 | Obtain estimates for tenant improvements |  | 10d | 2010-12-22 13:00 | 2011-01-05 12:00 | 46 | 16.88d | 0d | Office manager | 80h |
| 52 | 2.3.2 | Identify additional costs (furniture, equipment) |  | 10d | 2011-01-05 13:00 | 2011-01-19 12:00 | 47 | 11.88d | 0d | Relo PM | 80h |
| 53 | 2.4 | Hire contractors for major tenant improvements |  | 5d | 2011-01-05 13:00 | 2011-01-12 12:00 | 51 | 16.88d | 5d | Relo PM | 40h |
| 54 | 2.5 | Planning complete | milestone | 0d | 2011-01-19 17:00 | 2011-01-19 17:00 | 45, 47, 49, 46, 52, 53 | 11.38d | 0d |  |  |
| 55 | 3 | **Construct and set up space** |  | 225d | 2011-01-20 08:00 | 2011-11-30 17:00 | 54 | 11.38d | 0d |  | 904h |
| 56 | 3.1 | **Prep phone system** |  | 5d | 2011-01-20 08:00 | 2011-01-26 17:00 | 54 | 231.38d |  |  | 40h |
| 57 | 3.1.1 | Review phone system requirements |  | 3d | 2011-01-20 08:00 | 2011-01-24 17:00 |  | 231.38d | 0d | Telecom admin | 24h |
| 58 | 3.1.2 | Order new phone numbers |  | 1d | 2011-01-25 08:00 | 2011-01-25 17:00 | 57 | 231.38d | 0d | Telecom admin | 8h |
| 59 | 3.1.3 | Order long-distance service |  | 1d | 2011-01-26 08:00 | 2011-01-26 17:00 | 58 | 231.38d | 0d | Telecom admin | 8h |
| 60 | 3.1.4 | Phone lines ordered | milestone | 0d | 2011-01-26 17:00 | 2011-01-26 17:00 | 59 | 231.38d | 220d |  |  |

| ID | WBS | Task | Type | Duration | Start | Finish | Predecessors | Total slack | Free slack | Constraint | Resources | Work |
| --- | --- | --- | --- | --- | --- | --- | --- | --- | --- | --- | --- | --- |
| 61 | 3.2 | **Design and construction** |  | 93d | 2011-01-20 08:00 | 2011-05-30 17:00 |  | 143.38d |  |  |  | 344h |
| 62 | 3.2.1 | **Design space** |  | 66d | 2011-01-20 08:00 | 2011-04-21 17:00 |  | 143.38d |  |  |  | 320h |
| 63 | 3.2.1.1 | Design office space |  | 25d | 2011-01-20 08:00 | 2011-02-23 17:00 | 54 | 143.38d | 0d |  | Office manager [50%]; Architect | 200h |
| 64 | 3.2.1.2 | Prepare drawings |  | 5d | 2011-02-24 08:00 | 2011-03-02 17:00 | 63 | 143.38d | 0d |  | Architect | 40h |
| 65 | 3.2.1.3 | Design IT infrastructure |  | 10d | 2011-03-03 08:00 | 2011-03-16 17:00 | 64 | 143.38d | 0d |  | Network mgr | 80h |
| 66 | 3.2.1.4 | Obtain final budget estimates |  | 10d | 2011-03-17 08:00 | 2011-03-30 17:00 | 65 | 143.38d | 0d |  |  |  |
| 67 | 3.2.1.5 | Sign off on plans |  | 1d | 2011-03-31 08:00 | 2011-03-31 17:00 | 66 | 143.38d | 0d |  |  |  |
| 68 | 3.2.1.6 | Obtain permits |  | 3w | 2011-04-01 08:00 | 2011-04-21 17:00 | 67 | 143.38d | 0d |  |  |  |
| 69 | 3.2.2 | **Construction** |  | 20d | 2011-04-22 08:00 | 2011-05-19 17:00 | 68 | 143.38d |  |  |  |  |
| 70 | 3.2.2.1 | Demolish walls |  | 5d | 2011-04-22 08:00 | 2011-04-28 17:00 |  | 143.38d | 0d |  |  |  |
| 71 | 3.2.2.2 | Construct new walls |  | 15d | 2011-04-29 08:00 | 2011-05-19 17:00 | 70 | 143.38d | 0d |  |  |  |
| 72 | 3.2.2.3 | Elec, mech, HVAC |  | 15d | 2011-04-29 08:00 | 2011-05-19 17:00 | 70 | 143.38d | 0d |  |  |  |
| 73 | 3.2.3 | **Walkthrough and repair** |  | 7d | 2011-05-20 08:00 | 2011-05-30 17:00 | 72, 71 | 143.38d |  |  |  | 24h |
| 74 | 3.2.3.1 | Repair issues |  | 5d | 2011-05-20 08:00 | 2011-05-26 17:00 |  | 143.38d | 0d |  |  |  |
| 75 | 3.2.3.2 | Schedule open house for employees |  | 1d | 2011-05-20 08:00 | 2011-05-20 17:00 |  | 149.38d |  |  | Relo PM; Office manager | 16h |
| 76 | 3.2.3.3 | Clean new office |  | 1d | 2011-05-27 08:00 | 2011-05-27 17:00 | 74 | 143.38d | 0d |  | Cleaning service | 8h |
| 77 | 3.2.3.4 | Construction complete | milestone | 0d | 2011-05-27 17:00 | 2011-05-27 17:00 | 76 | 143.38d | 0d |  |  |  |
| 78 | 3.2.3.5 | Open house |  | 1d | 2011-05-30 08:00 | 2011-05-30 17:00 | 77 | 143.38d |  |  |  |  |
| 79 | 3.3 | **Set up services** |  | 10d | 2011-03-17 08:00 | 2011-03-30 17:00 | 54FS+2mo | 11.38d | 0d |  |  | 200h |
| 80 | 3.3.1 | Order change of address labels |  | 1d | 2011-03-17 08:00 | 2011-03-17 17:00 |  | 20.38d |  |  | Mailroom | 8h |
| 81 | 3.3.2 | Obtain estimates from signage companies |  | 7d | 2011-03-17 08:00 | 2011-03-25 17:00 |  | 11.38d | 0d |  | Office manager | 56h |
| 82 | 3.3.3 | Order signage |  | 3d | 2011-03-28 08:00 | 2011-03-30 17:00 | 81 | 11.38d |  |  | Office manager | 24h |
| 83 | 3.3.4 | Arrange external maintenance |  | 5d | 2011-03-17 08:00 | 2011-03-23 17:00 |  | 16.38d |  |  | Office manager | 40h |
| 84 | 3.3.5 | Arrange for trash disposal |  | 1d | 2011-03-17 08:00 | 2011-03-17 17:00 |  | 20.38d |  |  | Office manager | 8h |
| 85 | 3.3.6 | Arrange for cleaning service |  | 1d | 2011-03-17 08:00 | 2011-03-17 17:00 |  | 20.38d |  |  | Office manager | 8h |
| 86 | 3.3.7 | Arrange for recycling |  | 1d | 2011-03-17 08:00 | 2011-03-17 17:00 |  | 20.38d |  |  | Office manager | 8h |
| 87 | 3.3.8 | Order security system |  | 2d | 2011-03-17 08:00 | 2011-03-18 17:00 |  | 19.38d |  |  | Office manager | 16h |
| 88 | 3.3.9 | Send change of address to vendors, customers, supscriptions |  | 1d | 2011-03-17 08:00 | 2011-03-17 17:00 |  | 20.38d |  |  | Mailroom | 8h |
| 89 | 3.3.10 | Notify all leasers of equipment move |  | 1d | 2011-03-17 08:00 | 2011-03-17 17:00 |  | 20.38d |  |  | Office manager | 8h |
| 90 | 3.3.11 | Order checks with new address |  | 1d | 2011-03-17 08:00 | 2011-03-17 17:00 |  | 20.38d |  |  | Office manager | 8h |
| 91 | 3.3.12 | Schedule disconnection of utilities |  | 1d | 2011-03-17 08:00 | 2011-03-17 17:00 |  | 20.38d |  |  | Office manager | 8h |
| 92 | 3.4 | Service setup complete | milestone | 0d | 2011-03-30 17:00 | 2011-11-30 17:00 | 79 | 11.38d | 0d | start no earlier than 2010-09-20 08:00 |  |  |

| ID | WBS | Task | Type | Duration | Start | Finish | Predecessors | Total slack | Free slack | Resources | Work |
| --- | --- | --- | --- | --- | --- | --- | --- | --- | --- | --- | --- |
| 93 | 3.5 | **Create office assignment layout** |  | 31d | 2011-01-20 08:00 | 2011-03-03 17:00 |  | 205.38d | 194d |  | 80h |
| 94 | 3.5.1 | Assign office spaces |  | 5d | 2011-02-24 08:00 | 2011-03-02 17:00 | 63 | 204.38d | 0d | Office manager | 40h |
| 95 | 3.5.2 | Assign new phone numbers, extensions |  | 2d | 2011-01-20 08:00 | 2011-01-21 17:00 |  | 232.38d | 0d | Telecom admin | 16h |
| 96 | 3.5.3 | Create new office extension directory |  | 1d | 2011-01-24 08:00 | 2011-01-24 17:00 | 95 | 232.38d | 0d | Telecommunications administrator | 8h |
| 97 | 3.5.4 | Create new office layout map |  | 1d | 2011-03-03 08:00 | 2011-03-03 17:00 | 94 | 204.38d | 0d | Office manager | 8h |
| 98 | 3.5.5 | Create new fax cover sheet |  | 1d | 2011-01-25 08:00 | 2011-01-25 17:00 | 96 | 232.38d |  | Office manager | 8h |
| 99 | 3.5.6 | Office plan complete | milestone | 0d | 2011-03-03 17:00 | 2011-03-03 17:00 | 97, 96 | 204.38d | 0d |  |  |
| 100 | 3.6 | **Order new stationery** |  | 1d | 2011-03-04 08:00 | 2011-03-04 17:00 | 99 | 204.38d |  |  | 56h |
| 101 | 3.6.1 | Order new letterhead and envelopes |  | 1d | 2011-03-04 08:00 | 2011-03-04 17:00 |  | 204.38d | 202d | Office manager | 8h |
| 102 | 3.6.2 | Order new business cards |  | 1d | 2011-03-04 08:00 | 2011-03-04 17:00 |  | 204.38d | 202d | Office manager | 8h |
| 103 | 3.6.3 | Order new business forms |  | 1d | 2011-03-04 08:00 | 2011-03-04 17:00 |  | 204.38d | 202d | Office manager | 8h |
| 104 | 3.6.4 | Get shipping labels |  | 1d | 2011-03-04 08:00 | 2011-03-04 17:00 |  | 204.38d |  | Mailroom administrator | 8h |
| 105 | 3.6.5 | Create map to location |  | 1d | 2011-03-04 08:00 | 2011-03-04 17:00 |  | 204.38d |  | Office manager | 8h |
| 106 | 3.6.6 | Notify post office of change of address |  | 1d | 2011-03-04 08:00 | 2011-03-04 17:00 |  | 204.38d | 202d | Mailroom | 8h |
| 107 | 3.6.7 | Update company website with new information |  | 1d | 2011-03-04 08:00 | 2011-03-04 17:00 |  | 204.38d | 202d | Webmaster | 8h |
| 108 | 3.7 | **Hire movers** |  | 13d | 2011-02-17 08:00 | 2011-03-07 17:00 | 54FS+1mo | 203.38d |  |  | 104h |
| 109 | 3.7.1 | Obtain estimates from moving companies |  | 12d | 2011-02-17 08:00 | 2011-03-04 17:00 |  | 203.38d | 0d | Relo PM | 96h |
| 110 | 3.7.2 | Choose moving company |  | 1d | 2011-03-07 08:00 | 2011-03-07 17:00 | 109 | 203.38d | 192d | Relo PM | 8h |
| 111 | 3.8 | **Obtain insurance** |  | 10d | 2011-01-20 08:00 | 2011-02-02 17:00 |  | 226.38d |  |  | 80h |
| 112 | 3.8.1 | Appraise assets |  | 3d | 2011-01-20 08:00 | 2011-01-24 17:00 |  | 226.38d | 0d | Accounting mgr | 24h |
| 113 | 3.8.2 | Obtain quotes for insurance |  | 6d | 2011-01-25 08:00 | 2011-02-01 17:00 | 112 | 226.38d | 0d | Office manager | 48h |
| 114 | 3.8.3 | Purchase insurance |  | 1d | 2011-02-02 08:00 | 2011-02-02 17:00 | 113 | 226.38d | 215d | Office manager | 8h |
| 115 | 4 | Construction and prep complete | milestone | 0d | 2011-11-30 17:00 | 2011-11-30 17:00 | 55, 92, 110, 114, 93 | 11.38d | 0d |  |  |
| 116 | 5 | **Move** |  | 9d | 2011-12-01 08:00 | 2011-12-13 17:00 | 115 | 11.38d | 0d |  | 56h |
| 117 | 5.1 | Inventory office |  | 5d | 2011-12-01 08:00 | 2011-12-07 17:00 |  | 11.38d | 0d | Office manager | 40h |
| 118 | 5.2 | Distribute new keys, cards |  | 1d | 2011-12-01 08:00 | 2011-12-01 17:00 |  | 19.38d | 8d | Office manager | 8h |
| 119 | 5.3 | Collect old keys, cards |  | 1d | 2011-12-01 08:00 | 2011-12-01 17:00 |  | 15.38d | 4d | Office manager | 8h |
| 120 | 5.4 | Pack and move |  | 4d | 2011-12-08 08:00 | 2011-12-13 17:00 | 119, 117 | 11.38d | 0d |  |  |
| 121 | 5.5 | Move complete | milestone | 0d | 2011-12-13 17:00 | 2011-12-13 17:00 | 95, 117, 118, 101, 102, 103, 74, 76, 106, 107, 91, 120 | 11.38d | 0d |  |  |

| ID | WBS | Task | Type | Duration | Start | Finish | Predecessors | Total slack | Free slack | Resources | Work |
| --- | --- | --- | --- | --- | --- | --- | --- | --- | --- | --- | --- |
| 122 | 6 | **Pre-move tasks** |  | 4d | 2011-12-01 08:00 | 2011-12-06 17:00 | 116SS | 25.38d |  |  | 32h |
| 123 | 6.1 | Install phone system |  | 4d | 2011-12-01 08:00 | 2011-12-06 17:00 | 60 | 25.38d |  | Telecom admin | 32h |
| 124 | 7 | **Post-Move** |  | 9d | 2011-12-14 08:00 | 2011-12-26 17:00 | 121 | 11.38d |  |  | 104h |
| 125 | 7.1 | Check for damage and missing items |  | 9d | 2011-12-14 08:00 | 2011-12-26 17:00 |  | 11.38d | 0d | Office manager | 72h |
| 126 | 7.2 | Schedule phone training |  | 1d | 2011-12-14 08:00 | 2011-12-14 17:00 |  | 19.38d | 8d | Telecom admin | 8h |
| 127 | 7.3 | Schedule security training |  | 1d | 2011-12-14 08:00 | 2011-12-14 17:00 |  | 19.38d | 8d | Office manager | 8h |
| 128 | 7.4 | Schedule fire drill |  | 1d | 2011-12-14 08:00 | 2011-12-14 17:00 |  | 19.38d | 8d | Office manager | 8h |
| 129 | 7.5 | Schedule open house for clients |  | 1d | 2011-12-14 08:00 | 2011-12-14 17:00 |  | 19.38d | 8d | Relo PM | 8h |
| 130 | 7.6 | Office move complete | milestone | 0d | 2011-12-26 17:00 | 2011-12-26 17:00 | 121, 125, 126, 127, 128, 129 | 11.38d |  |  |  |
