# Office Move

Schedule from MS Project, 2010-11-01 to 2012-02-02, costs in $.

## Calendars

- Standard: Mon-Fri 08:00-12:00, 13:00-17:00; Sat-Sun off.

## Resources

| Resource | Group | Unit | Rate |
| --- | --- | --- | --- |
| Relo PM |  |  | 90 |
| Office manager |  |  | 80 |
| Telecom admin |  |  | 80 |
| Network mgr |  |  | 90 |
| Mailroom |  |  | 50 |
| Accounting mgr |  |  | 90 |
| Phone company | External |  |  |
| Cleaning service | External |  | 50 |
| Webmaster |  |  | 70 |
| Movers | External |  | 50 |
| Architect | External |  | 90 |
| Lodging |  |  |  |
| Airfare |  |  |  |
| Mileage |  |  |  |
| Meals |  |  |  |
| System admin |  |  | 70 |
| Network admin |  |  | 70 |
| System mgr |  |  | 80 |
| Relo Assistant |  |  | 60 |
| Wine |  | Gallon | 6 |
| Brochure |  | Piece | 2.5 |
| Packet |  | Per | 1.2 |
| Keycard |  | Card | 3.75 |

## Schedule

| ID | WBS | Task | Type | Duration | Start | Finish | Predecessors | Total slack | Free slack | Resources | Work | Cost |
| --- | --- | --- | --- | --- | --- | --- | --- | --- | --- | --- | --- | --- |
| 1 | 1 | **Planning Move** |  | 90d | 2010-11-01 | 2011-03-04 |  | -0.5d | 0d |  | 1110h | 27,000 |
| 2 | 1.1 | **Document requirements** |  | 38.5d | 2010-11-01 | 2010-12-23 |  | -0.5d | 0d |  | 334h | 18,600 |
| 3 | 1.1.1 | Identify physical requirements |  | 30d | 2010-11-01 | 2010-12-10 |  | -0.5d | 0d | Relo PM [50%]; Relo Assistant [50%] | 240h | 18,000 |
| 4 | 1.1.2 | Draft the budget |  | 10d | 2010-12-01 | 2010-12-15 | 3FS-2.5% | -0.5d | 0d | Relo PM | 80h |  |
| 5 | 1.1.3 | **Mgt meeting** |  | 6d | 2010-12-10 | 2010-12-17 |  |  |  |  | 14h | 600 |
| 6 | 1.1.3.1 | Prepare mgt presentation |  | 3d | 2010-12-15 | 2010-12-23 | 4 | -3.5d | 0d | Relo PM [25%] | 6h |  |
| 7 | 1.1.3.2 | Prepare materials | manual | 2d | 2010-12-20 | 2010-12-21 | 6 |  |  | Relo Assistant [25%]; Relo PM [25%] | 8h | 600 |
| 8 | 1.1.3.3 | Present to mgt | manual | 4h | 2010-12-17 | 2010-12-17 | 7 |  |  |  |  |  |
| 9 | 1.2 | **Choose new location** |  | 90d | 2010-11-01 | 2011-03-04 |  | 30d |  |  | 376h |  |
| 10 | 1.2.1 | **Evaluate build sites** |  | 0d | 2010-11-01 | 2010-11-01 |  | 329d |  |  |  |  |
| 11 | 1.2.1.1 | Identify potential build sites | inactive | 20d | 2010-11-01 | 2010-11-26 |  | 209d | 0d | Relo PM | 160h | 14,400 |
| 12 | 1.2.1.2 | Identify construction needs | inactive | 30d | 2010-11-29 | 2011-01-26 | 11 | 196d | 0d | Relo PM | 240h | 21,600 |
| 13 | 1.2.1.3 | Select site | inactive | 10d | 2011-01-27 | 2011-02-09 | 12 | 196d | 0d | Relo PM | 80h | 7,200 |
| 14 | 1.2.1.4 | Finalize purchase | inactive | 60d | 2011-02-10 | 2011-05-04 | 13 | 196d |  | Relo PM | 480h | 43,200 |
| 15 | 1.2.2 | **Evaluate lease sites** |  | 60d | 2010-12-13 | 2011-03-04 |  | 0d |  |  | 376h |  |
| 16 | 1.2.2.1 | Identify potential sites |  | 20d | 2010-12-13 | 2011-01-26 | 3 | 0d |  | Relo PM | 160h |  |
| 17 | 1.2.2.2 | Identify tenant improvements |  | 7d | 2011-01-27 | 2011-02-04 | 16 | 0d |  | Relo PM | 56h |  |
| 18 | 1.2.2.3 | Select site |  | 10d | 2011-02-07 | 2011-02-18 | 17, 4 | 0d |  | Relo PM | 80h |  |
| 19 | 1.2.2.4 | Finalize lease |  | 10d | 2011-02-21 | 2011-03-04 | 18 | 0d |  | Relo PM | 80h |  |
| 20 | 1.3 | **Identify costs** |  | 19d | 2011-01-25 | 2011-02-18 |  | 19d |  |  | 360h | 8,400 |
| 21 | 1.3.1 | Estimate costs for tenant improvements |  | 10d | 2011-02-07 | 2011-02-18 | 17 | 209d | 0d | Relo PM; Relo Assistant | 160h | 4,800 |
| 22 | 1.3.2 | Identify addl costs (furniture, equipment) |  | 10d | 2011-01-25 | 2011-02-07 | 16FS-2d | 19d |  | Relo PM | 80h |  |
| 23 | 1.3.3 | Inventory office |  | 7.5d | 2011-02-07 | 2011-02-16 | 17, 16 | 238.5d |  | Relo Assistant; Office manager | 120h | 3,600 |
| 24 | 1.4 | Planning complete | milestone | 0d | 2011-03-04 | 2011-03-04 | 16, 18, 19, 17, 22 | 0d |  |  |  |  |
| 25 | 1.5 | Hire contractors for tenant improvements |  | 5d | 2011-02-21 | 2011-02-25 | 21 | 209d | 71d | Relo PM | 40h |  |

| ID | WBS | Task | Type | Duration | Start | Finish | Predecessors | Total slack | Free slack | Constraint | Resources | Work |
| --- | --- | --- | --- | --- | --- | --- | --- | --- | --- | --- | --- | --- |
| 26 | 2 | **Prep phone system** |  | 225d | 2011-03-07 | 2012-01-13 | 24 | 14d |  |  |  | 888h |
| 27 | 2.1 | Review phone system requirements |  | 3d | 2011-03-07 | 2011-03-09 |  | 230d | 0d |  | Telecom admin | 24h |
| 28 | 2.2 | Order new phone numbers |  | 1d | 2011-03-10 | 2011-03-10 | 27 | 230d | 0d |  | Telecom admin | 8h |
| 29 | 2.3 | Order long-distance service |  | 1d | 2011-03-11 | 2011-03-11 | 28 | 230d | 0d |  | Telecom admin | 8h |
| 30 | 2.4 | Phone lines ordered | milestone | 0d | 2011-03-11 | 2011-03-11 | 29 | 230d | 220d |  |  |  |
| 31 | 2.5 | **Design and construction** |  | 93d | 2011-03-07 | 2011-07-13 |  | 138d |  |  |  | 344h |
| 32 | 2.5.1 | **Design space** |  | 66d | 2011-03-07 | 2011-06-06 |  | 138d |  |  |  | 320h |
| 33 | 2.5.1.1 | Design office space |  | 25d | 2011-03-07 | 2011-04-08 | 24 | 138d | 0d |  | Office manager [50%]; Architect | 200h |
| 34 | 2.5.1.2 | Prepare drawings |  | 5d | 2011-04-11 | 2011-04-15 | 33 | 138d | 0d |  | Architect | 40h |
| 35 | 2.5.1.3 | Design IT infrastructure |  | 10d | 2011-04-18 | 2011-04-29 | 34 | 138d | 0d |  | Network mgr | 80h |
| 36 | 2.5.1.4 | Obtain final budget estimates |  | 10d | 2011-05-02 | 2011-05-13 | 35 | 138d | 0d |  |  |  |
| 37 | 2.5.1.5 | Sign off on plans |  | 1d | 2011-05-16 | 2011-05-16 | 36 | 138d | 0d |  |  |  |
| 38 | 2.5.1.6 | Obtain permits |  | 3w | 2011-05-17 | 2011-06-06 | 37 | 138d | 0d |  |  |  |
| 39 | 2.5.2 | **Construction** |  | 20d | 2011-06-07 | 2011-07-04 | 38 | 138d |  |  |  |  |
| 40 | 2.5.2.1 | Demolish walls |  | 5d | 2011-06-07 | 2011-06-13 | 25 | 138d | 0d |  |  |  |
| 41 | 2.5.2.2 | Construct new walls |  | 15d | 2011-06-14 | 2011-07-04 | 40 | 138d | 0d |  |  |  |
| 42 | 2.5.2.3 | Elec, mech, HVAC |  | 15d | 2011-06-14 | 2011-07-04 | 40 | 138d | 0d |  |  |  |
| 43 | 2.5.3 | **Walkthrough and repair** |  | 7d | 2011-07-05 | 2011-07-13 | 42, 41 | 138d |  |  |  | 24h |
| 44 | 2.5.3.1 | Repair issues |  | 5d | 2011-07-05 | 2011-07-11 |  | 138d | 0d |  |  |  |
| 45 | 2.5.3.2 | Schedule open house for employees |  | 1d | 2011-07-05 | 2011-07-05 |  | 152d |  |  | Relo PM; Office manager | 16h |
| 46 | 2.5.3.3 | Clean new office |  | 1d | 2011-07-12 | 2011-07-12 | 44 | 138d | 0d |  | Cleaning service | 8h |
| 47 | 2.5.3.4 | Construction complete | milestone | 0d | 2011-07-12 | 2011-07-12 | 46 | 146d | 0d |  |  |  |
| 48 | 2.5.3.5 | Open house |  | 1d | 2011-07-13 | 2011-07-13 | 47 | 146d |  |  |  |  |
| 49 | 2.6 | **Set up services** |  | 10d | 2011-05-02 | 2011-05-13 | 24FS+2mo | 0d |  |  |  | 200h |
| 50 | 2.6.1 | Order change of address labels |  | 1d | 2011-05-02 | 2011-05-02 |  | 9d |  |  | Mailroom | 8h |
| 51 | 2.6.2 | Obtain estimates from signage companies |  | 7d | 2011-05-02 | 2011-05-10 |  | 0d |  |  | Office manager | 56h |
| 52 | 2.6.3 | Order signage |  | 3d | 2011-05-11 | 2011-05-13 | 51 | 0d |  |  | Office manager | 24h |
| 53 | 2.6.4 | Arrange external maintenance |  | 5d | 2011-05-02 | 2011-05-06 |  | 5d |  |  | Office manager | 40h |
| 54 | 2.6.5 | Arrange for trash disposal |  | 1d | 2011-05-02 | 2011-05-02 |  | 9d |  |  | Office manager | 8h |
| 55 | 2.6.6 | Arrange for cleaning service |  | 1d | 2011-05-02 | 2011-05-02 |  | 9d |  |  | Office manager | 8h |
| 56 | 2.6.7 | Arrange for recycling |  | 1d | 2011-05-02 | 2011-05-02 |  | 9d |  |  | Office manager | 8h |
| 57 | 2.6.8 | Order security system |  | 2d | 2011-05-02 | 2011-05-03 |  | 8d |  |  | Office manager | 16h |
| 58 | 2.6.9 | Send change of address to vendors, customers, supscriptions |  | 1d | 2011-05-02 | 2011-05-02 |  | 9d |  |  | Mailroom | 8h |
| 59 | 2.6.10 | Notify all leasers of equipment move |  | 1d | 2011-05-02 | 2011-05-02 |  | 9d |  |  | Office manager | 8h |
| 60 | 2.6.11 | Order checks with new address |  | 1d | 2011-05-02 | 2011-05-02 |  | 9d |  |  | Office manager | 8h |
| 61 | 2.6.12 | Schedule disconnection of utilities |  | 1d | 2011-05-02 | 2011-05-02 |  | 9d |  |  | Office manager | 8h |
| 62 | 2.7 | Service setup complete | milestone | 0d | 2011-05-13 | 2012-01-13 | 49 | 0d |  | start no earlier than 2010-09-20 |  |  |

| ID | WBS | Task | Type | Duration | Start | Finish | Predecessors | Total slack | Free slack | Resources | Work |
| --- | --- | --- | --- | --- | --- | --- | --- | --- | --- | --- | --- |
| 63 | 2.8 | **Create office assignment layout** |  | 9d | 2011-04-11 | 2011-04-21 |  | 191d |  |  | 72h |
| 64 | 2.8.1 | Assign office spaces |  | 5d | 2011-04-11 | 2011-04-15 | 33 | 191d | 0d | Office manager | 40h |
| 65 | 2.8.2 | Assign new phone numbers, extensions |  | 2d | 2011-04-18 | 2011-04-19 | 64 | 191d | 0d | Telecom admin | 16h |
| 66 | 2.8.3 | Create new office extension directory |  | 1d | 2011-04-20 | 2011-04-20 | 65 | 191d | 0d |  |  |
| 67 | 2.8.4 | Create new office layout map |  | 1d | 2011-04-18 | 2011-04-18 | 64 | 194d | 2d | Office manager | 8h |
| 68 | 2.8.5 | Create new fax cover sheet |  | 1d | 2011-04-21 | 2011-04-21 | 66 | 191d |  | Office manager | 8h |
| 69 | 2.8.6 | Office plan complete | milestone | 0d | 2011-04-20 | 2011-04-20 | 67, 66 | 192d | 0d |  |  |
| 70 | 2.9 | **Order new stationery** |  | 1d | 2011-04-21 | 2011-04-21 | 69 | 196d |  |  | 48h |
| 71 | 2.9.1 | Order new letterhead and envelopes |  | 1d | 2011-04-21 | 2011-04-21 |  | 196d |  | Office manager | 8h |
| 72 | 2.9.2 | Order new business cards |  | 1d | 2011-04-21 | 2011-04-21 |  | 196d |  | Office manager | 8h |
| 73 | 2.9.3 | Order new business forms |  | 1d | 2011-04-21 | 2011-04-21 |  | 196d |  | Office manager | 8h |
| 74 | 2.9.4 | Get shipping labels |  | 1d | 2011-04-21 | 2011-04-21 |  | 205d |  |  |  |
| 75 | 2.9.5 | Create map to location |  | 1d | 2011-04-21 | 2011-04-21 |  | 205d |  | Office manager | 8h |
| 76 | 2.9.6 | Notify post office of change of address |  | 1d | 2011-04-21 | 2011-04-21 |  | 196d |  | Mailroom | 8h |
| 77 | 2.9.7 | Update company website with new information |  | 1d | 2011-04-21 | 2011-04-21 |  | 196d |  | Webmaster | 8h |
| 78 | 2.10 | **Hire movers** |  | 13d | 2011-04-04 | 2011-04-20 | 24FS+1mo | 192d |  |  | 104h |
| 79 | 2.10.1 | Obtain estimates from moving companies |  | 12d | 2011-04-04 | 2011-04-19 |  | 192d | 0d | Relo PM | 96h |
| 80 | 2.10.2 | Choose moving company |  | 1d | 2011-04-20 | 2011-04-20 | 79 | 192d |  | Relo PM | 8h |
| 81 | 2.11 | **Obtain insurance** |  | 10d | 2011-03-07 | 2011-03-18 |  | 215d |  |  | 80h |
| 82 | 2.11.1 | Appraise assets |  | 3d | 2011-03-07 | 2011-03-09 |  | 215d | 0d | Accounting mgr | 24h |
| 83 | 2.11.2 | Obtain quotes for insurance |  | 6d | 2011-03-10 | 2011-03-17 | 82 | 215d | 0d | Office manager | 48h |
| 84 | 2.11.3 | Purchase insurance |  | 1d | 2011-03-18 | 2011-03-18 | 83 | 215d |  | Office manager | 8h |
| 85 | 3 | Construction and prep complete | milestone | 0d | 2012-01-13 | 2012-01-13 | 62, 80, 84, 63 | 0d |  |  |  |
| 86 | 4 | **Move** |  | 5d | 2012-01-16 | 2012-01-20 | 85 | 0d |  |  | 16h |
| 87 | 4.1 | Distribute new keys, cards |  | 1d | 2012-01-16 | 2012-01-16 |  | 4d |  | Office manager | 8h |
| 88 | 4.2 | Collect old keys, cards |  | 1d | 2012-01-16 | 2012-01-16 |  | 0d |  | Office manager | 8h |
| 89 | 4.3 | Pack and move |  | 4d | 2012-01-17 | 2012-01-20 | 88, 23 | 0d |  |  |  |
| 90 | 4.4 | Move complete | milestone | 0d | 2012-01-20 | 2012-01-20 | 65, 87, 71, 72, 73, 44, 46, 76, 77, 61, 89, 23 | 0d |  |  |  |

| ID | WBS | Task | Type | Duration | Start | Finish | Predecessors | Total slack | Resources | Work |
| --- | --- | --- | --- | --- | --- | --- | --- | --- | --- | --- |
| 91 | 5 | **Pre-move tasks** |  | 4d | 2012-01-16 | 2012-01-19 | 86SS | 10d |  | 32h |
| 92 | 5.1 | Install phone system |  | 4d | 2012-01-16 | 2012-01-19 | 30 | 10d | Telecom admin | 32h |
| 93 | 6 | **Post-Move** |  | 9d | 2012-01-23 | 2012-02-02 | 90 | 0d |  | 104h |
| 94 | 6.1 | Check for damage and missing items |  | 9d | 2012-01-23 | 2012-02-02 |  | 0d | Office manager | 72h |
| 95 | 6.2 | Schedule phone training |  | 1d | 2012-01-23 | 2012-01-23 |  | 8d | Telecom admin | 8h |
| 96 | 6.3 | Schedule security training |  | 1d | 2012-01-23 | 2012-01-23 |  | 8d | Office manager | 8h |
| 97 | 6.4 | Schedule fire drill |  | 1d | 2012-01-23 | 2012-01-23 |  | 8d | Office manager | 8h |
| 98 | 6.5 | Schedule open house for clients |  | 1d | 2012-01-23 | 2012-01-23 |  | 8d | Relo PM | 8h |
| 99 | 6.6 | Office move complete | milestone | 0d | 2012-02-02 | 2012-02-02 | 90, 94, 95, 96, 97, 98 | 0d |  |  |
