# Office Move

Schedule from MS Project, 2010-11-01 to 2011-08-17, costs in $.

## Calendars

- Standard: Mon-Fri 08:00-12:00, 13:00-17:00; Sat-Sun off.

## Resources

| Resource | Group | Unit | Rate |
| --- | --- | --- | --- |
| Relo PM | Mgt |  | 90 |
| Office manager | IT |  | 80 |
| Telecom admin | IT |  | 70 |
| Network mgr | IT |  | 90 |
| Mailroom |  |  |  |
| Accounting mgr | Acct |  | 90 |
| Local phone company |  |  |  |
| Cleaning service |  |  |  |
| Webmaster | IT |  | 60 |
| Movers |  |  |  |
| Architect |  |  | 100 |
| Network tech | IT |  | 60 |
| Network admin | IT |  | 70 |
| Bookkeeper | Acct |  | 50 |
| Billing supervisor | Acct |  | 60 |
| Sys admin | IT |  | 70 |
| System architect | IT |  |  |
| Stationery |  | Packet | 2 |
| Sign |  | SIgn | 50 |
| Printer Cartridges |  | Catridge | 59 |
| Wine |  | Gallon | 6 |
| Lodging |  |  |  |
| Mileage |  |  |  |
| Airfare |  |  |  |
| Relo Asst | Mgt |  | 60 |

## Schedule

| ID | WBS | Task | Type | Duration | Start | Finish | Predecessors | Total slack | Free slack | Resources | Work | Cost |
| --- | --- | --- | --- | --- | --- | --- | --- | --- | --- | --- | --- | --- |
| 1 | 1 | **Planning Move** |  | 87.5d? | 2010-11-01 | 2011-03-02 |  | 0d |  |  | 8h | 720 |
| 2 | 1.1 | **Document requirements** |  | 40d | 2010-11-01 | 2010-12-24 |  | 0d |  |  | 8h | 720 |
| 3 | 1.1.1 | Meet with mgt | manual | 1d | 2010-11-01 | 2010-11-01 |  |  |  | Relo PM | 8h | 720 |
| 4 | 1.1.2 | Identify physical requirements |  | 40d | 2010-11-01 | 2010-12-24 |  | 0d |  |  |  |  |
| 5 | 1.1.3 | Draft the budget |  | 10d | 2010-12-13 | 2010-12-24 | 4FS-2.5% | 27.5d |  |  |  |  |
| 6 | 1.2 | **Choose new location** |  | 87.5d? | 2010-11-01 | 2011-03-02 |  | 40d |  |  |  |  |
| 7 | 1.2.1 | Evaluate build sites |  | 1d? | 2010-11-01 | 2010-11-01 |  | 206.5d |  |  |  |  |
| 8 | 1.2.2 | **Evaluate lease sites** |  | 47.5d | 2010-12-27 | 2011-03-02 |  | 0d |  |  |  |  |
| 9 | 1.2.2.1 | Identify potential sites |  | 20d | 2010-12-27 | 2011-01-21 | 4 | 0d |  |  |  |  |
| 10 | 1.2.2.2 | Identify tenant improvements |  | 7.5d | 2011-01-24 | 2011-02-02 | 9 | 0d |  |  |  |  |
| 11 | 1.2.2.3 | Select site |  | 10d | 2011-02-02 | 2011-02-16 | 10, 5 | 0d |  |  |  |  |
| 12 | 1.2.2.4 | Finalize lease |  | 10d | 2011-02-16 | 2011-03-02 | 11 | 0d |  |  |  |  |
| 13 | 1.3 | **Identify costs** |  | 20d | 2011-02-02 | 2011-03-02 |  | 0d |  |  |  |  |
| 14 | 1.3.1 | Obtain estimates for tenant improvements |  | 10d | 2011-02-02 | 2011-02-16 | 10 | 5d | 0d |  |  |  |
| 15 | 1.3.2 | Identify additional costs (furniture, equipment) |  | 10d | 2011-02-16 | 2011-03-02 | 11 | 0d |  |  |  |  |
| 16 | 1.4 | Hire contractors for major tenant improvements |  | 5d | 2011-02-16 | 2011-02-23 | 14 | 5d |  |  |  |  |
| 17 | 1.5 | Planning complete | milestone | 0d | 2011-03-02 | 2011-03-02 | 9, 11, 12, 10, 15, 16 | 0d |  |  |  |  |
| 18 | 2 | **Construct and set up space** |  | 102d | 2011-03-02 | 2011-07-22 | 17 | 0d |  |  |  |  |
| 19 | 2.1 | **Prep phone system** |  | 5d | 2011-03-02 | 2011-03-09 | 17 | 93d |  |  |  |  |
| 20 | 2.1.1 | Review phone system requirements |  | 3d | 2011-03-02 | 2011-03-07 |  | 93d | 0d |  |  |  |
| 21 | 2.1.2 | Order new phone numbers |  | 1d | 2011-03-07 | 2011-03-08 | 20 | 93d | 0d |  |  |  |
| 22 | 2.1.3 | Order long-distance service |  | 1d | 2011-03-08 | 2011-03-09 | 21 | 93d | 0d |  |  |  |
| 23 | 2.1.4 | Phone lines ordered | milestone | 0d | 2011-03-09 | 2011-03-09 | 22 | 93d | 87d |  |  |  |
| 24 | 2.2 | **Design and construction** |  | 98d | 2011-03-02 | 2011-07-18 |  | 0d |  |  |  |  |
| 25 | 2.2.1 | **Design space** |  | 66d | 2011-03-02 | 2011-06-02 |  | 0d |  |  |  |  |
| 26 | 2.2.1.1 | Design office space |  | 25d | 2011-03-02 | 2011-04-06 | 17 | 0d |  |  |  |  |
| 27 | 2.2.1.2 | Prepare drawings |  | 5d | 2011-04-06 | 2011-04-13 | 26 | 0d |  |  |  |  |
| 28 | 2.2.1.3 | Design IT infrastructure |  | 10d | 2011-04-13 | 2011-04-27 | 27 | 0d |  |  |  |  |
| 29 | 2.2.1.4 | Obtain final budget estimates |  | 10d | 2011-04-27 | 2011-05-11 | 28 | 0d |  |  |  |  |
| 30 | 2.2.1.5 | Sign off on plans |  | 1d | 2011-05-11 | 2011-05-12 | 29 | 0d |  |  |  |  |
| 31 | 2.2.1.6 | Obtain permits |  | 3w | 2011-05-12 | 2011-06-02 | 30 | 0d |  |  |  |  |

| ID | WBS | Task | Type | Duration | Start | Finish | Predecessors | Total slack | Free slack |
| --- | --- | --- | --- | --- | --- | --- | --- | --- | --- |
| 32 | 2.2.2 | **Construction** |  | 20d | 2011-06-02 | 2011-06-30 | 31 | 0d |  |
| 33 | 2.2.2.1 | Demolish walls |  | 5d | 2011-06-02 | 2011-06-09 |  | 0d |  |
| 34 | 2.2.2.2 | Construct new walls |  | 15d | 2011-06-09 | 2011-06-30 | 33 | 0d |  |
| 35 | 2.2.2.3 | Elec, mech, HVAC |  | 15d | 2011-06-09 | 2011-06-30 | 33 | 0d |  |
| 36 | 2.2.3 | **Walkthrough and repair** |  | 12d | 2011-06-30 | 2011-07-18 | 35, 34 | 0d |  |
| 37 | 2.2.3.1 | Repair issues |  | 5d | 2011-06-30 | 2011-07-07 |  | 0d |  |
| 38 | 2.2.3.2 | Schedule open house for employees |  | 1d | 2011-07-07 | 2011-07-08 | 37 | 9d | 5d |
| 39 | 2.2.3.3 | Clean new office |  | 1d | 2011-07-07 | 2011-07-08 | 37 | 0d |  |
| 40 | 2.2.3.4 | Construction complete | milestone | 0d | 2011-07-08 | 2011-07-08 | 39 | 0d |  |
| 41 | 2.2.3.5 | Open house |  | 1d | 2011-07-15 | 2011-07-18 | 40FS+5d, 38 | 4d |  |
| 42 | 2.3 | **Set up services** |  | 10d | 2011-04-27 | 2011-05-11 | 17FS+2mo | 52d |  |
| 43 | 2.3.1 | Order change of address labels |  | 1d | 2011-04-27 | 2011-04-28 |  | 61d |  |
| 44 | 2.3.2 | Obtain estimates from signage companies |  | 7d | 2011-04-27 | 2011-05-06 |  | 52d | 0d |
| 45 | 2.3.3 | Order signage |  | 3d | 2011-05-06 | 2011-05-11 | 44 | 52d |  |
| 46 | 2.3.4 | Arrange external maintenance |  | 5d | 2011-04-27 | 2011-05-04 |  | 57d |  |
| 47 | 2.3.5 | Arrange for trash disposal |  | 1d | 2011-04-27 | 2011-04-28 |  | 61d |  |
| 48 | 2.3.6 | Arrange for cleaning service |  | 1d | 2011-04-27 | 2011-04-28 |  | 61d |  |
| 49 | 2.3.7 | Arrange for recycling |  | 1d | 2011-04-27 | 2011-04-28 |  | 61d |  |
| 50 | 2.3.8 | Order security system |  | 2d | 2011-04-27 | 2011-04-29 |  | 60d |  |
| 51 | 2.3.9 | Send change of address to vendors, customers, supscriptions |  | 1d | 2011-04-27 | 2011-04-28 |  | 61d |  |
| 52 | 2.3.10 | Notify all leasers of equipment move |  | 1d | 2011-04-27 | 2011-04-28 |  | 61d |  |
| 53 | 2.3.11 | Order checks with new address |  | 1d | 2011-04-27 | 2011-04-28 |  | 61d |  |
| 54 | 2.3.12 | Schedule disconnection of utilities |  | 1d | 2011-04-27 | 2011-04-28 |  | 61d |  |
| 55 | 2.4 | **Create office assignment layout** |  | 31d | 2011-03-02 | 2011-04-14 |  | 71d |  |
| 56 | 2.4.1 | Assign office spaces |  | 5d | 2011-04-06 | 2011-04-13 | 26 | 70d | 0d |
| 57 | 2.4.2 | Assign new phone numbers, extensions |  | 2d | 2011-03-02 | 2011-03-04 |  | 98d | 0d |
| 58 | 2.4.3 | Create new office extension directory |  | 1d | 2011-03-04 | 2011-03-07 | 57 | 98d | 0d |
| 59 | 2.4.4 | Create new office layout map |  | 1d | 2011-04-13 | 2011-04-14 | 56 | 70d | 0d |
| 60 | 2.4.5 | Create new fax cover sheet |  | 1d | 2011-03-07 | 2011-03-08 | 58 | 98d |  |
| 61 | 2.4.6 | Office plan complete | milestone | 0d | 2011-04-14 | 2011-04-14 | 59, 58 | 70d | 0d |

| ID | WBS | Task | Type | Duration | Start | Finish | Predecessors | Total slack | Free slack |
| --- | --- | --- | --- | --- | --- | --- | --- | --- | --- |
| 62 | 2.5 | **Order new stationery** |  | 1d | 2011-04-14 | 2011-04-15 | 61 | 70d |  |
| 63 | 2.5.1 | Order new letterhead and envelopes |  | 1d | 2011-04-14 | 2011-04-15 |  | 70d |  |
| 64 | 2.5.2 | Order new business cards |  | 1d | 2011-04-14 | 2011-04-15 |  | 70d |  |
| 65 | 2.5.3 | Order new business forms |  | 1d | 2011-04-14 | 2011-04-15 |  | 70d |  |
| 66 | 2.5.4 | Get shipping labels |  | 1d | 2011-04-14 | 2011-04-15 |  | 70d |  |
| 67 | 2.5.5 | Create map to location |  | 1d | 2011-04-14 | 2011-04-15 |  | 70d |  |
| 68 | 2.5.6 | Notify post office of change of address |  | 1d | 2011-04-14 | 2011-04-15 |  | 70d |  |
| 69 | 2.5.7 | Update company website with new information |  | 1d | 2011-04-14 | 2011-04-15 |  | 70d |  |
| 70 | 2.6 | **Hire movers** |  | 13d | 2011-03-30 | 2011-04-18 | 17FS+1mo | 69d |  |
| 71 | 2.6.1 | Obtain estimates from moving companies |  | 12d | 2011-03-30 | 2011-04-15 |  | 69d | 0d |
| 72 | 2.6.2 | Choose moving company |  | 1d | 2011-04-15 | 2011-04-18 | 71 | 69d |  |
| 73 | 2.7 | **Obtain insurance** |  | 10d | 2011-07-08 | 2011-07-22 | 40 | 0d |  |
| 74 | 2.7.1 | Appraise assets |  | 3d | 2011-07-08 | 2011-07-13 |  | 0d |  |
| 75 | 2.7.2 | Obtain quotes for insurance |  | 6d | 2011-07-13 | 2011-07-21 | 74 | 0d |  |
| 76 | 2.7.3 | Purchase insurance |  | 1d | 2011-07-21 | 2011-07-22 | 75 | 0d |  |
| 77 | 2.7.4 | **Pre-move tasks** |  | 4d | 2011-07-08 | 2011-07-14 |  | 6d |  |
| 78 | 2.7.4.1 | Install phone system |  | 4d | 2011-07-08 | 2011-07-14 | 23 | 6d |  |
| 79 | 3 | Construction and prep complete | milestone | 0d | 2011-07-22 | 2011-07-22 | 18, 72, 76, 55 | 0d |  |
| 80 | 4 | **Move** |  | 9d | 2011-07-22 | 2011-08-04 | 79, 42 | 0d |  |
| 81 | 4.1 | Inventory office |  | 5d | 2011-07-22 | 2011-07-29 |  | 0d |  |
| 82 | 4.2 | Distribute new keys, cards |  | 1d | 2011-07-22 | 2011-07-25 |  | 8d |  |
| 83 | 4.3 | Collect old keys, cards |  | 1d | 2011-07-22 | 2011-07-25 |  | 4d |  |
| 84 | 4.4 | Pack and move |  | 4d | 2011-07-29 | 2011-08-04 | 83, 81 | 0d |  |
| 85 | 4.5 | Move complete | milestone | 0d | 2011-08-04 | 2011-08-04 | 81, 82, 63, 64, 65, 68, 69, 54, 84 | 0d |  |

| ID | WBS | Task | Type | Duration | Start | Finish | Predecessors | Total slack |
| --- | --- | --- | --- | --- | --- | --- | --- | --- |
| 86 | 5 | **Post-Move** |  | 9d | 2011-08-04 | 2011-08-17 | 85 | 0d |
| 87 | 5.1 | Check for damage and missing items |  | 9d | 2011-08-04 | 2011-08-17 |  | 0d |
| 88 | 5.2 | Schedule phone training |  | 1d | 2011-08-04 | 2011-08-05 |  | 8d |
| 89 | 5.3 | Schedule security training |  | 1d | 2011-08-04 | 2011-08-05 |  | 8d |
| 90 | 5.4 | Schedule fire drill |  | 1d | 2011-08-04 | 2011-08-05 |  | 8d |
| 91 | 5.5 | Schedule open house for clients |  | 1d | 2011-08-04 | 2011-08-05 |  | 8d |
| 92 | 5.6 | Office move complete | milestone | 0d | 2011-08-17 | 2011-08-17 | 85, 87, 88, 89, 90, 91 | 0d |
