# OfficeMove_Timeline

Schedule from MS Project, 2010-07-17 to 2011-12-26, A marks actual dates.
MonteVista Solutions, Inc.

## Calendars

- Standard: Mon-Fri 08:00-12:00, 13:00-17:00; Sat-Sun off.

## Resources

| Resource |
| --- |
| Relo PM |
| Office manager |
| Telecom admin |
| Architect |
| Network mgr |
| Cleaning service |
| Mailroom |
| Webmaster |
| Accounting mgr |

## Schedule

| ID | WBS | Task | Type | Duration | Start | Finish | Predecessors | Complete | Remaining | Total slack | Free slack | Resources | Work | Actual work |
| --- | --- | --- | --- | --- | --- | --- | --- | --- | --- | --- | --- | --- | --- | --- |
| 1 | 1 | **Planning Move** |  | 150.5d | 2010-07-17 A | 2011-02-14 |  | 68% | 47.67d | 225d |  |  | 944h | 664h |
| 2 | 1.1 | **Document requirements** |  | 31d | 2010-11-01 A | 2010-12-13 A |  | 100% |  |  |  |  | 304h | 304h |
| 3 | 1.1.1 | Identify physical requirements |  | 28d | 2010-11-01 A | 2010-12-08 A |  | 100% |  |  |  | Relo PM | 224h | 224h |
| 4 | 1.1.2 | Draft the budget |  | 10d | 2010-11-30 A | 2010-12-13 A | 3FS-2.5% | 100% |  |  |  | Relo PM | 80h | 80h |
| 5 | 1.2 | **Choose new location** |  | 150.5d | 2010-07-17 A | 2011-02-14 |  | 68% | 47.53d | 225d |  |  | 440h | 320h |
| 6 | 1.2.1 | **Evaluate build sites** |  | 0d | 2010-07-17 | 2010-07-17 |  |  |  | 375.5d |  |  |  |  |
| 7 | 1.2.1.1 | Identify potential build sites | inactive | 20d | 2010-07-19 | 2010-08-13 |  |  |  | 255.5d | 0d | Relo PM | 160h |  |
| 8 | 1.2.1.2 | Identify construction needs | inactive | 30d | 2010-08-16 | 2010-09-24 | 7 |  |  | 255.5d | 0d | Relo PM | 240h |  |
| 9 | 1.2.1.3 | Select site | inactive | 10d | 2010-09-27 | 2010-10-08 | 8 |  |  | 255.5d | 0d | Relo PM | 80h |  |
| 10 | 1.2.1.4 | Finalize purchase | inactive | 60d | 2010-10-11 | 2010-12-31 | 9 |  |  | 255.5d |  | Relo PM | 480h |  |
| 11 | 1.2.2 | **Evaluate lease sites** |  | 47.5d | 2010-12-09 A | 2011-02-14 |  | 68% | 15d | 0d |  |  | 440h | 320h |
| 12 | 1.2.2.1 | Identify potential sites |  | 20d | 2010-12-09 A | 2011-01-05 A | 3 | 100% |  |  |  | Relo PM | 160h | 160h |
| 13 | 1.2.2.2 | Identify tenant improvements |  | 7.5d | 2011-01-06 A | 2011-01-17 A | 12 | 100% |  |  |  | Office manager; Relo PM | 120h | 120h |
| 14 | 1.2.2.3 | Select site |  | 10d | 2011-01-17 A | 2011-01-31 | 4, 13 | 50% | 5d | 0d |  | Relo PM | 80h | 40h |
| 15 | 1.2.2.4 | Finalize lease |  | 10d | 2011-01-31 | 2011-02-14 | 14 |  |  | 0d |  | Relo PM | 80h |  |
| 16 | 1.3 | **Identify costs** |  | 20d | 2011-01-17 A | 2011-02-14 |  | 25% | 15d | 0d |  |  | 160h | 40h |
| 17 | 1.3.1 | Obtain estimates for tenant improvements |  | 10d | 2011-01-17 A | 2011-01-31 | 13 | 50% | 5d | 5d | 0d | Office manager | 80h | 40h |
| 18 | 1.3.2 | Identify additional costs (furniture, equipment) |  | 10d | 2011-01-31 | 2011-02-14 | 14 |  |  | 0d |  | Relo PM | 80h |  |
| 19 | 1.4 | Hire contractors for major tenant improvements |  | 5d | 2011-01-31 | 2011-02-07 | 17 |  |  | 5d |  | Relo PM | 40h |  |
| 20 | 1.5 | Planning complete | milestone | 0d | 2011-02-14 | 2011-02-14 | 12, 13, 14, 15, 18, 19 |  |  | 0d |  |  |  |  |
| 21 | 2 | **Construct and set up space** |  | 225d? | 2011-02-14 | 2011-12-26 | 20 |  |  | 0d |  |  | 1080h |  |
| 22 | 2.1 | **Prep phone system** |  | 5d? | 2011-02-14 | 2011-02-21 | 20 |  |  | 220d |  |  | 40h |  |
| 23 | 2.1.1 | Review phone system requirements |  | 3d | 2011-02-14 | 2011-02-17 |  |  |  | 220d | 0d | Telecom admin | 24h |  |
| 24 | 2.1.2 | Order new phone numbers |  | 1d | 2011-02-17 | 2011-02-18 | 23 |  |  | 220d | 0d | Telecom admin | 8h |  |
| 25 | 2.1.3 | Order long-distance service |  | 1d? | 2011-02-18 | 2011-02-21 | 24 |  |  | 220d | 0d | Telecom admin | 8h |  |
| 26 | 2.1.4 | Phone lines ordered | milestone | 0d | 2011-02-21 | 2011-02-21 | 25 |  |  | 220d |  |  |  |  |

| ID | WBS | Task | Type | Duration | Start | Finish | Predecessors | Total slack | Free slack | Constraint | Resources | Work |
| --- | --- | --- | --- | --- | --- | --- | --- | --- | --- | --- | --- | --- |
| 27 | 2.2 | **Design and construction** |  | 93d? | 2011-02-14 | 2011-06-23 |  | 132d |  |  |  | 344h |
| 28 | 2.2.1 | **Design space** |  | 66d? | 2011-02-14 | 2011-05-17 |  | 132d |  |  |  | 320h |
| 29 | 2.2.1.1 | Design office space |  | 25d? | 2011-02-14 | 2011-03-21 | 20 | 132d | 0d |  | Office manager [50%]; Architect | 200h |
| 30 | 2.2.1.2 | Prepare drawings |  | 5d | 2011-03-21 | 2011-03-28 | 29 | 132d | 0d |  | Architect | 40h |
| 31 | 2.2.1.3 | Design IT infrastructure |  | 10d | 2011-03-28 | 2011-04-11 | 30 | 132d | 0d |  | Network mgr | 80h |
| 32 | 2.2.1.4 | Obtain final budget estimates |  | 10d | 2011-04-11 | 2011-04-25 | 31 | 132d | 0d |  |  |  |
| 33 | 2.2.1.5 | Sign off on plans |  | 1d | 2011-04-25 | 2011-04-26 | 32 | 132d | 0d |  |  |  |
| 34 | 2.2.1.6 | Obtain permits |  | 3w | 2011-04-26 | 2011-05-17 | 33 | 132d | 0d |  |  |  |
| 35 | 2.2.2 | **Construction** |  | 20d | 2011-05-17 | 2011-06-14 | 34 | 132d |  |  |  |  |
| 36 | 2.2.2.1 | Demolish walls |  | 5d | 2011-05-17 | 2011-05-24 |  | 132d | 0d |  |  |  |
| 37 | 2.2.2.2 | Construct new walls |  | 15d | 2011-05-24 | 2011-06-14 | 36 | 132d | 0d |  |  |  |
| 38 | 2.2.2.3 | Elec, mech, HVAC |  | 15d | 2011-05-24 | 2011-06-14 | 36 | 132d | 0d |  |  |  |
| 39 | 2.2.3 | **Walkthrough and repair** |  | 7d | 2011-06-14 | 2011-06-23 | 37, 38 | 132d |  |  |  | 24h |
| 40 | 2.2.3.1 | Repair issues |  | 5d | 2011-06-14 | 2011-06-21 |  | 132d | 0d |  |  |  |
| 41 | 2.2.3.2 | Schedule open house for employees |  | 1d | 2011-06-14 | 2011-06-15 |  | 138d |  |  | Relo PM; Office manager | 16h |
| 42 | 2.2.3.3 | Clean new office |  | 1d | 2011-06-21 | 2011-06-22 | 40 | 132d | 0d |  | Cleaning service | 8h |
| 43 | 2.2.3.4 | Construction complete | milestone | 0d | 2011-06-22 | 2011-06-22 | 42 | 132d | 0d |  |  |  |
| 44 | 2.2.3.5 | Open house |  | 1d | 2011-06-22 | 2011-06-23 | 43 | 132d |  |  |  |  |
| 45 | 2.3 | **Set up services** |  | 10d | 2011-04-11 | 2011-04-25 | 20FS+2mo | 0d |  |  |  | 200h |
| 46 | 2.3.1 | Order change of address labels |  | 1d | 2011-04-11 | 2011-04-12 |  | 9d |  |  | Mailroom | 8h |
| 47 | 2.3.2 | Obtain estimates from signage companies |  | 7d | 2011-04-11 | 2011-04-20 |  | 0d |  |  | Office manager | 56h |
| 48 | 2.3.3 | Order signage |  | 3d | 2011-04-20 | 2011-04-25 | 47 | 0d |  |  | Office manager | 24h |
| 49 | 2.3.4 | Arrange external maintenance |  | 5d | 2011-04-11 | 2011-04-18 |  | 5d |  |  | Office manager | 40h |
| 50 | 2.3.5 | Arrange for trash disposal |  | 1d | 2011-04-11 | 2011-04-12 |  | 9d |  |  | Office manager | 8h |
| 51 | 2.3.6 | Arrange for cleaning service |  | 1d | 2011-04-11 | 2011-04-12 |  | 9d |  |  | Office manager | 8h |
| 52 | 2.3.7 | Arrange for recycling |  | 1d | 2011-04-11 | 2011-04-12 |  | 9d |  |  | Office manager | 8h |
| 53 | 2.3.8 | Order security system |  | 2d | 2011-04-11 | 2011-04-13 |  | 8d |  |  | Office manager | 16h |
| 54 | 2.3.9 | Send change of address to vendors, customers, supscriptions |  | 1d | 2011-04-11 | 2011-04-12 |  | 9d |  |  | Mailroom | 8h |
| 55 | 2.3.10 | Notify all leasers of equipment move |  | 1d | 2011-04-11 | 2011-04-12 |  | 9d |  |  | Office manager | 8h |
| 56 | 2.3.11 | Order checks with new address |  | 1d | 2011-04-11 | 2011-04-12 |  | 9d |  |  | Office manager | 8h |
| 57 | 2.3.12 | Schedule disconnection of utilities |  | 1d | 2011-04-11 | 2011-04-12 |  | 9d |  |  | Office manager | 8h |
| 58 | 2.4 | Service setup complete | milestone | 0d | 2011-04-25 | 2011-12-26 | 45 | 0d |  | start no earlier than 2010-09-20 |  |  |

| ID | WBS | Task | Type | Duration | Start | Finish | Predecessors | Total slack | Free slack | Resources | Work |
| --- | --- | --- | --- | --- | --- | --- | --- | --- | --- | --- | --- |
| 59 | 2.5 | **Create office assignment layout** |  | 6d | 2011-02-14 | 2011-02-22 |  | 201d | 7d |  | 72h |
| 60 | 2.5.1 | Assign office spaces |  | 5d | 2011-02-14 | 2011-02-21 |  | 201d | 0d | Office manager | 40h |
| 61 | 2.5.2 | Assign new phone numbers, extensions |  | 2d | 2011-02-14 | 2011-02-16 |  | 203d | 0d | Telecom admin | 16h |
| 62 | 2.5.3 | Create new office extension directory |  | 1d | 2011-02-16 | 2011-02-17 | 61 | 203d | 0d |  |  |
| 63 | 2.5.4 | Create new office layout map |  | 1d | 2011-02-21 | 2011-02-22 | 60 | 201d | 0d | Office manager | 8h |
| 64 | 2.5.5 | Create new fax cover sheet |  | 1d | 2011-02-17 | 2011-02-18 | 62 | 203d |  | Office manager | 8h |
| 65 | 2.5.6 | Office plan complete | milestone | 0d | 2011-02-22 | 2011-02-22 | 62, 63 | 201d | 0d |  |  |
| 66 | 2.6 | **Order new stationery** |  | 1d | 2011-02-22 | 2011-02-23 | 65 | 209d |  |  | 48h |
| 67 | 2.6.1 | Order new letterhead and envelopes |  | 1d | 2011-02-22 | 2011-02-23 |  | 209d | 15d | Office manager | 8h |
| 68 | 2.6.2 | Order new business cards |  | 1d | 2011-02-22 | 2011-02-23 |  | 209d | 15d | Office manager | 8h |
| 69 | 2.6.3 | Order new business forms |  | 1d | 2011-02-22 | 2011-02-23 |  | 209d | 15d | Office manager | 8h |
| 70 | 2.6.4 | Get shipping labels |  | 1d | 2011-02-22 | 2011-02-23 |  | 218d |  |  |  |
| 71 | 2.6.5 | Create map to location |  | 1d | 2011-02-22 | 2011-02-23 |  | 218d |  | Office manager | 8h |
| 72 | 2.6.6 | Notify post office of change of address |  | 1d | 2011-02-22 | 2011-02-23 |  | 209d | 15d | Mailroom | 8h |
| 73 | 2.6.7 | Update company website with new information |  | 1d | 2011-02-22 | 2011-02-23 |  | 209d | 15d | Webmaster | 8h |
| 74 | 2.7 | **Hire movers** |  | 13d | 2011-02-14 | 2011-03-03 |  | 194d |  |  | 104h |
| 75 | 2.7.1 | Obtain estimates from moving companies |  | 12d | 2011-02-14 | 2011-03-02 |  | 194d | 0d | Relo PM | 96h |
| 76 | 2.7.2 | Choose moving company |  | 1d | 2011-03-02 | 2011-03-03 | 75 | 194d | 0d | Relo PM | 8h |
| 77 | 2.8 | **Obtain insurance** |  | 10d | 2011-02-14 | 2011-02-28 |  | 197d |  |  | 80h |
| 78 | 2.8.1 | Appraise assets |  | 3d | 2011-02-14 | 2011-02-17 |  | 197d | 0d | Accounting mgr | 24h |
| 79 | 2.8.2 | Obtain quotes for insurance |  | 6d | 2011-02-17 | 2011-02-25 | 78 | 197d | 0d | Office manager | 48h |
| 80 | 2.8.3 | Purchase insurance |  | 1d | 2011-02-25 | 2011-02-28 | 79 | 197d | 3d | Office manager | 8h |
| 81 | 2.9 | Construction and prep complete | milestone | 0d | 2011-03-03 | 2011-03-03 | 59, 76, 80 | 194d | 0d |  |  |
| 82 | 2.10 | **Move** |  | 9d | 2011-03-03 | 2011-03-16 | 81 | 194d | 0d |  | 56h |
| 83 | 2.10.1 | Inventory office |  | 5d | 2011-03-03 | 2011-03-10 |  | 194d | 0d | Office manager | 40h |
| 84 | 2.10.2 | Distribute new keys, cards |  | 1d | 2011-03-03 | 2011-03-04 |  | 202d | 8d | Office manager | 8h |
| 85 | 2.10.3 | Collect old keys, cards |  | 1d | 2011-03-03 | 2011-03-04 |  | 198d | 4d | Office manager | 8h |
| 86 | 2.10.4 | Pack and move |  | 4d | 2011-03-10 | 2011-03-16 | 83, 85 | 194d | 0d |  |  |
| 87 | 2.10.5 | Move complete | milestone | 0d | 2011-03-16 | 2011-03-16 | 61, 67, 68, 69, 72, 73, 83, 84, 86 | 194d | 0d |  |  |

| ID | WBS | Task | Type | Duration | Start | Finish | Predecessors | Total slack | Free slack | Resources | Work |
| --- | --- | --- | --- | --- | --- | --- | --- | --- | --- | --- | --- |
| 88 | 2.11 | **Pre-move tasks** |  | 4d | 2011-03-03 | 2011-03-09 | 82SS | 208d |  |  | 32h |
| 89 | 2.11.1 | Install phone system |  | 4d | 2011-03-03 | 2011-03-09 |  | 208d |  | Telecom admin | 32h |
| 90 | 2.12 | **Post-Move** |  | 9d | 2011-03-16 | 2011-03-29 | 87 | 194d |  |  | 104h |
| 91 | 2.12.1 | Check for damage and missing items |  | 9d | 2011-03-16 | 2011-03-29 |  | 194d | 0d | Office manager | 72h |
| 92 | 2.12.2 | Schedule phone training |  | 1d | 2011-03-16 | 2011-03-17 |  | 202d | 8d | Telecom admin | 8h |
| 93 | 2.12.3 | Schedule security training |  | 1d | 2011-03-16 | 2011-03-17 |  | 202d | 8d | Office manager | 8h |
| 94 | 2.12.4 | Schedule fire drill |  | 1d | 2011-03-16 | 2011-03-17 |  | 202d | 8d | Office manager | 8h |
| 95 | 2.12.5 | Schedule open house for clients |  | 1d | 2011-03-16 | 2011-03-17 |  | 202d | 8d | Relo PM | 8h |
| 96 | 2.12.6 | Office move complete | milestone | 0d | 2011-03-29 | 2011-03-29 | 87, 91, 92, 93, 94, 95 | 194d |  |  |  |
