# Office Move

Schedule from MS Project, 2010-11-01 to 2012-01-19, costs in $, A marks actual dates.

## Calendars

- Standard: Mon-Fri 08:00-12:00, 13:00-17:00; Sat-Sun off.

## Resources

| Resource | Unit | Rate |
| --- | --- | --- |
| Relo PM |  | 90 |
| Office manager |  | 70 |
| Telecom admin |  | 70 |
| Network mgr |  | 90 |
| Mailroom |  | 50 |
| Accounting mgr |  | 90 |
| Local phone company |  |  |
| Cleaning service |  |  |
| Webmaster |  | 70 |
| Movers |  |  |
| Architect |  | 90 |
| Lodging |  |  |
| Airfare |  |  |
| Mileage |  |  |
| Cheese | Pound | 5 |
| Wine | Gallon | 6 |
| Brochure | Per | 3 |

## Schedule

| ID | WBS | Task | Duration | Start | Finish | Complete | Remaining | Total slack | Constraint |
| --- | --- | --- | --- | --- | --- | --- | --- | --- | --- |
| 1 | 1 | **Mgt meetings** | 310.38d | 2010-11-03 A | 2012-01-11 | 9% | 281.28d | 6.12d |  |
| 2 | 1.1 | Mgt meetings 1 | 3h | 2010-11-03 A | 2010-11-03 A | 100% |  |  | start no earlier than 2010-11-03 |
| 3 | 1.2 | Mgt meetings 2 | 3h | 2010-11-17 A | 2010-11-17 A | 100% |  |  | start no earlier than 2010-11-17 |
| 4 | 1.3 | Mgt meetings 3 | 3h | 2010-12-01 A | 2010-12-01 A | 100% |  |  | start no earlier than 2010-12-01 |
| 5 | 1.4 | Mgt meetings 4 | 3h | 2010-12-15 | 2010-12-15 |  |  | 286.12d | start no earlier than 2010-12-15 |
| 6 | 1.5 | Mgt meetings 5 | 3h | 2010-12-29 | 2010-12-29 |  |  | 276.12d | start no earlier than 2010-12-29 |
| 7 | 1.6 | Mgt meetings 6 | 3h | 2011-01-12 | 2011-01-12 |  |  | 266.12d | start no earlier than 2011-01-12 |
| 8 | 1.7 | Mgt meetings 7 | 3h | 2011-01-26 | 2011-01-26 |  |  | 256.12d | start no earlier than 2011-01-26 |
| 9 | 1.8 | Mgt meetings 8 | 3h | 2011-02-09 | 2011-02-09 |  |  | 246.12d | start no earlier than 2011-02-09 |
| 10 | 1.9 | Mgt meetings 9 | 3h | 2011-02-23 | 2011-02-23 |  |  | 236.12d | start no earlier than 2011-02-23 |
| 11 | 1.10 | Mgt meetings 10 | 3h | 2011-03-09 | 2011-03-09 |  |  | 226.12d | start no earlier than 2011-03-09 |
| 12 | 1.11 | Mgt meetings 11 | 3h | 2011-03-23 | 2011-03-23 |  |  | 216.12d | start no earlier than 2011-03-23 |
| 13 | 1.12 | Mgt meetings 12 | 3h | 2011-04-06 | 2011-04-06 |  |  | 206.12d | start no earlier than 2011-04-06 |
| 14 | 1.13 | Mgt meetings 13 | 3h | 2011-04-20 | 2011-04-20 |  |  | 196.12d | start no earlier than 2011-04-20 |
| 15 | 1.14 | Mgt meetings 14 | 3h | 2011-05-04 | 2011-05-04 |  |  | 186.12d | start no earlier than 2011-05-04 |
| 16 | 1.15 | Mgt meetings 15 | 3h | 2011-05-18 | 2011-05-18 |  |  | 176.12d | start no earlier than 2011-05-18 |
| 17 | 1.16 | Mgt meetings 16 | 3h | 2011-06-01 | 2011-06-01 |  |  | 166.12d | start no earlier than 2011-06-01 |
| 18 | 1.17 | Mgt meetings 17 | 3h | 2011-06-15 | 2011-06-15 |  |  | 156.12d | start no earlier than 2011-06-15 |
| 19 | 1.18 | Mgt meetings 18 | 3h | 2011-06-29 | 2011-06-29 |  |  | 146.12d | start no earlier than 2011-06-29 |
| 20 | 1.19 | Mgt meetings 19 | 3h | 2011-07-13 | 2011-07-13 |  |  | 136.12d | start no earlier than 2011-07-13 |
| 21 | 1.20 | Mgt meetings 20 | 3h | 2011-07-27 | 2011-07-27 |  |  | 126.12d | start no earlier than 2011-07-27 |
| 22 | 1.21 | Mgt meetings 21 | 3h | 2011-08-10 | 2011-08-10 |  |  | 116.12d | start no earlier than 2011-08-10 |
| 23 | 1.22 | Mgt meetings 22 | 3h | 2011-08-24 | 2011-08-24 |  |  | 106.12d | start no earlier than 2011-08-24 |
| 24 | 1.23 | Mgt meetings 23 | 3h | 2011-09-07 | 2011-09-07 |  |  | 96.12d | start no earlier than 2011-09-07 |
| 25 | 1.24 | Mgt meetings 24 | 3h | 2011-09-21 | 2011-09-21 |  |  | 86.12d | start no earlier than 2011-09-21 |
| 26 | 1.25 | Mgt meetings 25 | 3h | 2011-10-05 | 2011-10-05 |  |  | 76.12d | start no earlier than 2011-10-05 |
| 27 | 1.26 | Mgt meetings 26 | 3h | 2011-10-19 | 2011-10-19 |  |  | 66.12d | start no earlier than 2011-10-19 |
| 28 | 1.27 | Mgt meetings 27 | 3h | 2011-11-02 | 2011-11-02 |  |  | 56.12d | start no earlier than 2011-11-02 |
| 29 | 1.28 | Mgt meetings 28 | 3h | 2011-11-16 | 2011-11-16 |  |  | 46.12d | start no earlier than 2011-11-16 |
| 30 | 1.29 | Mgt meetings 29 | 3h | 2011-11-30 | 2011-11-30 |  |  | 36.12d | start no earlier than 2011-11-30 |
| 31 | 1.30 | Mgt meetings 30 | 3h | 2011-12-14 | 2011-12-14 |  |  | 26.12d | start no earlier than 2011-12-14 |
| 32 | 1.31 | Mgt meetings 31 | 3h | 2011-12-28 | 2011-12-28 |  |  | 16.12d | start no earlier than 2011-12-28 |
| 33 | 1.32 | Mgt meetings 32 | 3h | 2012-01-11 | 2012-01-11 |  |  | 6.12d | start no earlier than 2012-01-11 |

| ID | WBS | Task | Type | Duration | Start | Finish | Predecessors | Complete | Remaining | Total slack | Free slack | Resources | Work | Actual work | Cost | Actual cost |
| --- | --- | --- | --- | --- | --- | --- | --- | --- | --- | --- | --- | --- | --- | --- | --- | --- |
| 34 | 2 | **Planning Move** |  | 75.5d | 2010-11-01 A | 2011-02-14 |  | 68% | 24.38d | 243d |  |  | 944h | 664h | 82,160 | 57,760 |
| 35 | 2.1 | **Document requirements** |  | 32d | 2010-11-01 A | 2010-12-14 |  | 97% | 0.82d | 286.5d |  |  | 304h | 304h | 27,360 | 27,360 |
| 36 | 2.1.1 | Identify physical requirements |  | 28d | 2010-11-01 A | 2010-12-08 A |  | 100% |  |  |  | Relo PM | 224h | 224h | 20,160 | 20,160 |
| 37 | 2.1.2 | Draft the budget |  | 10d | 2010-11-30 A | 2010-12-13 A | 36FS-2.5% | 100% |  |  |  | Relo PM | 80h | 80h | 7,200 | 7,200 |
| 38 | 2.1.3 | Review requirements and budget |  | 1d | 2010-12-14 | 2010-12-14 | 37 |  |  | 286.5d |  |  |  |  |  |  |
| 39 | 2.2 | **Choose new location** |  | 75.5d | 2010-11-01 A | 2011-02-14 |  | 68% | 23.84d | 243d |  |  | 440h | 320h | 38,400 | 27,600 |
| 40 | 2.2.1 | **Evaluate build sites** |  | 0d | 2010-11-01 | 2010-11-01 |  |  |  | 318.5d |  |  |  |  |  |  |
| 41 | 2.2.1.1 | Identify potential build sites | inactive | 20d | 2010-11-01 | 2010-11-26 |  |  |  | 198.5d | 0d | Relo PM | 160h |  | 14,400 |  |
| 42 | 2.2.1.2 | Identify construction needs | inactive | 30d | 2010-11-29 | 2011-01-07 | 41 |  |  | 198.5d | 0d | Relo PM | 240h |  | 21,600 |  |
| 43 | 2.2.1.3 | Select site | inactive | 10d | 2011-01-10 | 2011-01-21 | 42 |  |  | 198.5d | 0d | Relo PM | 80h |  | 7,200 |  |
| 44 | 2.2.1.4 | Finalize purchase | inactive | 60d | 2011-01-24 | 2011-04-15 | 43 |  |  | 198.5d |  | Relo PM | 480h |  | 43,200 |  |
| 45 | 2.2.2 | **Evaluate lease sites** |  | 47.5d | 2010-12-09 A | 2011-02-14 |  | 68% | 15d | 0d |  |  | 440h | 320h | 38,400 | 27,600 |
| 46 | 2.2.2.1 | Identify potential sites |  | 20d | 2010-12-09 A | 2011-01-05 A | 36 | 100% |  |  |  | Relo PM | 160h | 160h | 14,400 | 14,400 |
| 47 | 2.2.2.2 | Identify tenant improvements |  | 7.5d | 2011-01-06 A | 2011-01-17 A | 46 | 100% |  |  |  | Office manager; Relo PM | 120h | 120h | 9,600 | 9,600 |
| 48 | 2.2.2.3 | Select site |  | 10d | 2011-01-17 A | 2011-01-31 | 47, 37 | 50% | 5d | 0d |  | Relo PM | 80h | 40h | 7,200 | 3,600 |
| 49 | 2.2.2.4 | Finalize lease |  | 10d | 2011-01-31 | 2011-02-14 | 48 |  |  | 0d |  | Relo PM | 80h |  | 7,200 |  |
| 50 | 2.3 | **Identify costs** |  | 20d | 2011-01-17 A | 2011-02-14 |  | 25% | 15d |  |  |  | 160h | 40h | 12,800 | 2,800 |
| 51 | 2.3.1 | Obtain estimates for tenant improvements |  | 10d | 2011-01-17 A | 2011-01-31 | 47 | 50% | 5d | 5d | 0d | Office manager | 80h | 40h | 5,600 | 2,800 |
| 52 | 2.3.2 | Identify additional costs (furniture, equipment) |  | 10d | 2011-01-31 | 2011-02-14 | 48 |  |  | 0d |  | Relo PM | 80h |  | 7,200 |  |
| 53 | 2.4 | Hire contractors for major tenant improvements |  | 5d | 2011-01-31 | 2011-02-07 | 51 |  |  | 5d |  | Relo PM | 40h |  | 3,600 |  |
| 54 | 2.5 | Planning complete | milestone | 0d | 2011-02-14 | 2011-02-14 | 46, 48, 49, 47, 52, 53 |  |  | 0d |  |  |  |  |  |  |
| 55 | 3 | **Construct and set up space** |  | 225d? | 2011-02-14 | 2011-12-26 | 54 |  |  |  |  |  | 888h |  | 68,240 |  |
| 56 | 3.1 | **Prep phone system** |  | 5d? | 2011-02-14 | 2011-02-21 | 54 |  |  | 220d |  |  | 40h |  | 2,800 |  |
| 57 | 3.1.1 | Review phone system requirements |  | 3d | 2011-02-14 | 2011-02-17 |  |  |  | 220d | 0d | Telecom admin | 24h |  | 1,680 |  |
| 58 | 3.1.2 | Order new phone numbers |  | 1d | 2011-02-17 | 2011-02-18 | 57 |  |  | 220d | 0d | Telecom admin | 8h |  | 560 |  |
| 59 | 3.1.3 | Order long-distance service |  | 1d? | 2011-02-18 | 2011-02-21 | 58 |  |  | 220d | 0d | Telecom admin | 8h |  | 560 |  |
| 60 | 3.1.4 | Phone lines ordered | milestone | 0d | 2011-02-21 | 2011-02-21 | 59 |  |  | 220d |  |  |  |  |  |  |

| ID | WBS | Task | Type | Duration | Start | Finish | Predecessors | Total slack | Free slack | Constraint | Resources | Work | Cost |
| --- | --- | --- | --- | --- | --- | --- | --- | --- | --- | --- | --- | --- | --- |
| 61 | 3.2 | **Design and construction** |  | 93d? | 2011-02-14 | 2011-06-23 |  | 132d |  |  |  | 344h | 28,080 |
| 62 | 3.2.1 | **Design space** |  | 66d? | 2011-02-14 | 2011-05-17 |  | 132d |  |  |  | 320h | 26,800 |
| 63 | 3.2.1.1 | Design office space |  | 25d? | 2011-02-14 | 2011-03-21 | 54 | 132d | 0d |  | Office manager [50%]; Architect | 200h | 16,000 |
| 64 | 3.2.1.2 | Prepare drawings |  | 5d | 2011-03-21 | 2011-03-28 | 63 | 132d | 0d |  | Architect | 40h | 3,600 |
| 65 | 3.2.1.3 | Design IT infrastructure |  | 10d | 2011-03-28 | 2011-04-11 | 64 | 132d | 0d |  | Network mgr | 80h | 7,200 |
| 66 | 3.2.1.4 | Obtain final budget estimates |  | 10d | 2011-04-11 | 2011-04-25 | 65 | 132d | 0d |  |  |  |  |
| 67 | 3.2.1.5 | Sign off on plans |  | 1d | 2011-04-25 | 2011-04-26 | 66 | 132d | 0d |  |  |  |  |
| 68 | 3.2.1.6 | Obtain permits |  | 3w | 2011-04-26 | 2011-05-17 | 67 | 132d | 0d |  |  |  |  |
| 69 | 3.2.2 | **Construction** |  | 20d | 2011-05-17 | 2011-06-14 | 68 | 132d |  |  |  |  |  |
| 70 | 3.2.2.1 | Demolish walls |  | 5d | 2011-05-17 | 2011-05-24 |  | 132d | 0d |  |  |  |  |
| 71 | 3.2.2.2 | Construct new walls |  | 15d | 2011-05-24 | 2011-06-14 | 70 | 132d | 0d |  |  |  |  |
| 72 | 3.2.2.3 | Elec, mech, HVAC |  | 15d | 2011-05-24 | 2011-06-14 | 70 | 132d | 0d |  |  |  |  |
| 73 | 3.2.3 | **Walkthrough and repair** |  | 7d | 2011-06-14 | 2011-06-23 | 72, 71 | 132d |  |  |  | 24h | 1,280 |
| 74 | 3.2.3.1 | Repair issues |  | 5d | 2011-06-14 | 2011-06-21 |  | 132d | 0d |  |  |  |  |
| 75 | 3.2.3.2 | Schedule open house for employees |  | 1d | 2011-06-14 | 2011-06-15 |  | 138d |  |  | Relo PM; Office manager | 16h | 1,280 |
| 76 | 3.2.3.3 | Clean new office |  | 1d | 2011-06-21 | 2011-06-22 | 74 | 132d | 0d |  | Cleaning service | 8h |  |
| 77 | 3.2.3.4 | Construction complete | milestone | 0d | 2011-06-22 | 2011-06-22 | 76 | 132d | 0d |  |  |  |  |
| 78 | 3.2.3.5 | Open house |  | 1d | 2011-06-22 | 2011-06-23 | 77 | 132d |  |  |  |  |  |
| 79 | 3.3 | **Set up services** |  | 10d | 2011-04-11 | 2011-04-25 | 54FS+2mo | 0d |  |  |  | 200h | 13,680 |
| 80 | 3.3.1 | Order change of address labels |  | 1d | 2011-04-11 | 2011-04-12 |  | 9d |  |  | Mailroom | 8h | 400 |
| 81 | 3.3.2 | Obtain estimates from signage companies |  | 7d | 2011-04-11 | 2011-04-20 |  | 0d |  |  | Office manager | 56h | 3,920 |
| 82 | 3.3.3 | Order signage |  | 3d | 2011-04-20 | 2011-04-25 | 81 | 0d |  |  | Office manager | 24h | 1,680 |
| 83 | 3.3.4 | Arrange external maintenance |  | 5d | 2011-04-11 | 2011-04-18 |  | 5d |  |  | Office manager | 40h | 2,800 |
| 84 | 3.3.5 | Arrange for trash disposal |  | 1d | 2011-04-11 | 2011-04-12 |  | 9d |  |  | Office manager | 8h | 560 |
| 85 | 3.3.6 | Arrange for cleaning service |  | 1d | 2011-04-11 | 2011-04-12 |  | 9d |  |  | Office manager | 8h | 560 |
| 86 | 3.3.7 | Arrange for recycling |  | 1d | 2011-04-11 | 2011-04-12 |  | 9d |  |  | Office manager | 8h | 560 |
| 87 | 3.3.8 | Order security system |  | 2d | 2011-04-11 | 2011-04-13 |  | 8d |  |  | Office manager | 16h | 1,120 |
| 88 | 3.3.9 | Send change of address to vendors, customers, supscriptions |  | 1d | 2011-04-11 | 2011-04-12 |  | 9d |  |  | Mailroom | 8h | 400 |
| 89 | 3.3.10 | Notify all leasers of equipment move |  | 1d | 2011-04-11 | 2011-04-12 |  | 9d |  |  | Office manager | 8h | 560 |
| 90 | 3.3.11 | Order checks with new address |  | 1d | 2011-04-11 | 2011-04-12 |  | 9d |  |  | Office manager | 8h | 560 |
| 91 | 3.3.12 | Schedule disconnection of utilities |  | 1d | 2011-04-11 | 2011-04-12 |  | 9d |  |  | Office manager | 8h | 560 |
| 92 | 3.4 | Service setup complete | milestone | 0d | 2011-04-25 | 2011-12-26 | 79 | 0d |  | start no earlier than 2010-09-20 |  |  |  |

| ID | WBS | Task | Type | Duration | Start | Finish | Predecessors | Total slack | Free slack | Resources | Work | Cost |
| --- | --- | --- | --- | --- | --- | --- | --- | --- | --- | --- | --- | --- |
| 93 | 3.5 | **Create office assignment layout** |  | 31d | 2011-02-14 | 2011-03-29 |  | 194d |  |  | 72h | 5,040 |
| 94 | 3.5.1 | Assign office spaces |  | 5d | 2011-03-21 | 2011-03-28 | 63 | 193d | 0d | Office manager | 40h | 2,800 |
| 95 | 3.5.2 | Assign new phone numbers, extensions |  | 2d | 2011-02-14 | 2011-02-16 |  | 221d | 0d | Telecom admin | 16h | 1,120 |
| 96 | 3.5.3 | Create new office extension directory |  | 1d | 2011-02-16 | 2011-02-17 | 95 | 221d | 0d |  |  |  |
| 97 | 3.5.4 | Create new office layout map |  | 1d | 2011-03-28 | 2011-03-29 | 94 | 193d | 0d | Office manager | 8h | 560 |
| 98 | 3.5.5 | Create new fax cover sheet |  | 1d | 2011-02-17 | 2011-02-18 | 96 | 221d |  | Office manager | 8h | 560 |
| 99 | 3.5.6 | Office plan complete | milestone | 0d | 2011-03-29 | 2011-03-29 | 97, 96 | 193d | 0d |  |  |  |
| 100 | 3.6 | **Order new stationery** |  | 1d | 2011-03-29 | 2011-03-30 | 99 | 193d |  |  | 48h | 3,200 |
| 101 | 3.6.1 | Order new letterhead and envelopes |  | 1d | 2011-03-29 | 2011-03-30 |  | 193d |  | Office manager | 8h | 560 |
| 102 | 3.6.2 | Order new business cards |  | 1d | 2011-03-29 | 2011-03-30 |  | 193d |  | Office manager | 8h | 560 |
| 103 | 3.6.3 | Order new business forms |  | 1d | 2011-03-29 | 2011-03-30 |  | 193d |  | Office manager | 8h | 560 |
| 104 | 3.6.4 | Get shipping labels |  | 1d | 2011-03-29 | 2011-03-30 |  | 193d |  |  |  |  |
| 105 | 3.6.5 | Create map to location |  | 1d | 2011-03-29 | 2011-03-30 |  | 193d |  | Office manager | 8h | 560 |
| 106 | 3.6.6 | Notify post office of change of address |  | 1d | 2011-03-29 | 2011-03-30 |  | 193d |  | Mailroom | 8h | 400 |
| 107 | 3.6.7 | Update company website with new information |  | 1d | 2011-03-29 | 2011-03-30 |  | 193d |  | Webmaster | 8h | 560 |
| 108 | 3.7 | **Hire movers** |  | 13d | 2011-03-14 | 2011-03-31 | 54FS+1mo | 192d |  |  | 104h | 9,360 |
| 109 | 3.7.1 | Obtain estimates from moving companies |  | 12d | 2011-03-14 | 2011-03-30 |  | 192d | 0d | Relo PM | 96h | 8,640 |
| 110 | 3.7.2 | Choose moving company |  | 1d | 2011-03-30 | 2011-03-31 | 109 | 192d |  | Relo PM | 8h | 720 |
| 111 | 3.8 | **Obtain insurance** |  | 10d | 2011-02-14 | 2011-02-28 |  | 215d |  |  | 80h | 6,080 |
| 112 | 3.8.1 | Appraise assets |  | 3d | 2011-02-14 | 2011-02-17 |  | 215d | 0d | Accounting mgr | 24h | 2,160 |
| 113 | 3.8.2 | Obtain quotes for insurance |  | 6d | 2011-02-17 | 2011-02-25 | 112 | 215d | 0d | Office manager | 48h | 3,360 |
| 114 | 3.8.3 | Purchase insurance |  | 1d | 2011-02-25 | 2011-02-28 | 113 | 215d |  | Office manager | 8h | 560 |
| 115 | 4 | Construction and prep complete | milestone | 0d | 2011-12-26 | 2011-12-26 | 55, 92, 110, 114, 93 | 0d |  |  |  |  |
| 116 | 5 | **Move** |  | 9d | 2011-12-26 | 2012-01-06 | 115 | 0d |  |  | 56h | 3,920 |
| 117 | 5.1 | Inventory office |  | 5d | 2011-12-26 | 2012-01-02 |  | 0d |  | Office manager | 40h | 2,800 |
| 118 | 5.2 | Distribute new keys, cards |  | 1d | 2011-12-26 | 2011-12-27 |  | 8d |  | Office manager | 8h | 560 |
| 119 | 5.3 | Collect old keys, cards |  | 1d | 2011-12-26 | 2011-12-27 |  | 4d |  | Office manager | 8h | 560 |
| 120 | 5.4 | Pack and move |  | 4d | 2012-01-02 | 2012-01-06 | 119, 117 | 0d |  |  |  |  |
| 121 | 5.5 | Move complete | milestone | 0d | 2012-01-06 | 2012-01-06 | 95, 117, 118, 101, 102, 103, 74, 76, 106, 107, 91, 120 | 0d |  |  |  |  |

| ID | WBS | Task | Type | Duration | Start | Finish | Predecessors | Total slack | Resources | Work | Cost |
| --- | --- | --- | --- | --- | --- | --- | --- | --- | --- | --- | --- |
| 122 | 6 | **Pre-move tasks** |  | 4d | 2011-12-26 | 2011-12-30 | 116SS | 14d |  | 32h | 2,240 |
| 123 | 6.1 | Install phone system |  | 4d | 2011-12-26 | 2011-12-30 | 60 | 14d | Telecom admin | 32h | 2,240 |
| 124 | 7 | **Post-Move** |  | 9d | 2012-01-06 | 2012-01-19 | 121 | 0d |  | 104h | 7,440 |
| 125 | 7.1 | Check for damage and missing items |  | 9d | 2012-01-06 | 2012-01-19 |  | 0d | Office manager | 72h | 5,040 |
| 126 | 7.2 | Schedule phone training |  | 1d | 2012-01-06 | 2012-01-09 |  | 8d | Telecom admin | 8h | 560 |
| 127 | 7.3 | Schedule security training |  | 1d | 2012-01-06 | 2012-01-09 |  | 8d | Office manager | 8h | 560 |
| 128 | 7.4 | Schedule fire drill |  | 1d | 2012-01-06 | 2012-01-09 |  | 8d | Office manager | 8h | 560 |
| 129 | 7.5 | Schedule open house for clients |  | 1d | 2012-01-06 | 2012-01-09 |  | 8d | Relo PM | 8h | 720 |
| 130 | 7.6 | Office move complete | milestone | 0d | 2012-01-19 | 2012-01-19 | 121, 125, 126, 127, 128, 129 | 0d |  |  |  |
