# Office Move

Schedule from MS Project, 2010-11-01 to 2012-04-10, costs in $.

## Calendars

- Standard: Mon-Fri 08:00-12:00, 13:00-17:00; Sat-Sun off.

## Resources

| Resource | Group | Unit | Rate |
| --- | --- | --- | --- |
| Relo PM |  |  | 90 |
| Office manager |  |  | 80 |
| Telecom admin |  |  | 70 |
| Network mgr |  |  | 80 |
| Mailroom |  |  | 40 |
| Accounting mgr |  |  | 90 |
| Phone company | External |  |  |
| Cleaning service | External |  | 40 |
| Webmaster |  |  | 70 |
| Movers | External |  | 50 |
| Architect | External |  | 90 |
| Lodging |  |  |  |
| Airfare |  |  |  |
| Mileage |  |  |  |
| Meals |  |  |  |
| System admin |  |  | 70 |
| Network admin |  |  | 75 |
| System mgr |  |  | 90 |
| Relo Assistant |  |  | 60 |
| Wine |  | Gallon | 6 |
| Brochure |  | Piece | 2.5 |
| Packet |  | Per | 1.2 |
| Keycard |  | Card | 3.75 |

## Schedule

| ID | WBS | Task | Type | Duration | Start | Finish | Predecessors | Total slack | Free slack | Resources | Work | Cost |
| --- | --- | --- | --- | --- | --- | --- | --- | --- | --- | --- | --- | --- |
| 1 | 1 | **Planning Move** |  | 138d | 2010-11-01 | 2011-05-11 |  | -0.5d | 0d |  | 2110h | 181,380 |
| 2 | 1.1 | **Document requirements** |  | 38.5d | 2010-11-01 | 2010-12-23 |  | -0.5d | 0d |  | 334h | 26,340 |
| 3 | 1.1.1 | Identify physical requirements |  | 30d | 2010-11-01 | 2010-12-10 |  | -0.5d | 0d | Relo PM [50%]; Relo Assistant [50%] | 240h | 18,000 |
| 4 | 1.1.2 | Draft the budget |  | 10d | 2010-12-01 | 2010-12-15 | 3FS-2.5% | -0.5d | 0d | Relo PM | 80h | 7,200 |
| 5 | 1.1.3 | **Mgt meeting** |  | 6d | 2010-12-10 | 2010-12-17 |  |  |  |  | 14h | 1,140 |
| 6 | 1.1.3.1 | Prepare mgt presentation |  | 3d | 2010-12-15 | 2010-12-23 | 4 | -3.5d | 0d | Relo PM [25%] | 6h | 540 |
| 7 | 1.1.3.2 | Prepare materials | manual | 2d | 2010-12-20 | 2010-12-21 | 6 |  |  | Relo Assistant [25%]; Relo PM [25%] | 8h | 600 |
| 8 | 1.1.3.3 | Present to mgt | manual | 4h | 2010-12-17 | 2010-12-17 | 7 |  |  |  |  |  |
| 9 | 1.2 | **Choose new location** |  | 138d | 2010-11-01 | 2011-05-11 |  | 0d |  |  | 1376h | 123,840 |
| 10 | 1.2.1 | **Evaluate build sites** |  | 138d | 2010-11-01 | 2011-05-11 |  | 0d |  |  | 1000h | 90,000 |
| 11 | 1.2.1.1 | Identify potential build sites |  | 25d | 2010-11-01 | 2010-12-03 |  | 0d |  | Relo PM | 200h | 18,000 |
| 12 | 1.2.1.2 | Identify construction needs |  | 30d | 2010-12-06 | 2011-02-02 | 11 | 0d |  | Relo PM | 240h | 21,600 |
| 13 | 1.2.1.3 | Select site |  | 10d | 2011-02-03 | 2011-02-16 | 12 | 0d |  | Relo PM | 80h | 7,200 |
| 14 | 1.2.1.4 | Finalize purchase |  | 60d | 2011-02-17 | 2011-05-11 | 13 | 0d |  | Relo PM | 480h | 43,200 |
| 15 | 1.2.2 | **Evaluate lease sites** |  | 60d | 2010-12-13 | 2011-03-04 |  | 48d |  |  | 376h | 33,840 |
| 16 | 1.2.2.1 | Identify potential sites |  | 20d | 2010-12-13 | 2011-01-26 | 3 | 48d | 0d | Relo PM | 160h | 14,400 |
| 17 | 1.2.2.2 | Identify tenant improvements |  | 7d | 2011-01-27 | 2011-02-04 | 16 | 48d | 0d | Relo PM | 56h | 5,040 |
| 18 | 1.2.2.3 | Select site |  | 10d | 2011-02-07 | 2011-02-18 | 17, 4 | 48d | 0d | Relo PM | 80h | 7,200 |
| 19 | 1.2.2.4 | Finalize lease |  | 10d | 2011-02-21 | 2011-03-04 | 18 | 48d |  | Relo PM | 80h | 7,200 |
| 20 | 1.3 | **Identify costs** |  | 19d | 2011-01-25 | 2011-02-18 |  | 67d |  |  | 360h | 27,600 |
| 21 | 1.3.1 | Estimate costs for tenant improvements |  | 10d | 2011-02-07 | 2011-02-18 | 17 | 257d | 0d | Relo PM; Relo Assistant | 160h | 12,000 |
| 22 | 1.3.2 | Identify addl costs (furniture, equipment) |  | 10d | 2011-01-25 | 2011-02-07 | 16FS-2d | 67d |  | Relo PM | 80h | 7,200 |
| 23 | 1.3.3 | Inventory office |  | 7.5d | 2011-02-07 | 2011-02-16 | 17, 16 | 286.5d |  | Relo Assistant; Office manager | 120h | 8,400 |
| 24 | 1.4 | Planning complete | milestone | 0d | 2011-05-11 | 2011-05-11 | 16, 18, 19, 17, 22, 14 | 0d |  |  |  |  |
| 25 | 1.5 | Hire contractors for tenant improvements |  | 5d | 2011-02-21 | 2011-02-25 | 21 | 257d | 119d | Relo PM | 40h | 3,600 |

| ID | WBS | Task | Type | Duration | Start | Finish | Predecessors | Total slack | Free slack | Constraint | Resources | Work | Cost |
| --- | --- | --- | --- | --- | --- | --- | --- | --- | --- | --- | --- | --- | --- |
| 26 | 2 | **Prep phone system** |  | 225d | 2011-05-12 | 2012-03-21 | 24 | 14d |  |  |  | 888h | 71,880 |
| 27 | 2.1 | Review phone system requirements |  | 3d | 2011-05-12 | 2011-05-16 |  | 230d | 0d |  | Telecom admin | 24h | 1,680 |
| 28 | 2.2 | Order new phone numbers |  | 1d | 2011-05-17 | 2011-05-17 | 27 | 230d | 0d |  | Telecom admin | 8h | 560 |
| 29 | 2.3 | Order long-distance service |  | 1d | 2011-05-18 | 2011-05-18 | 28 | 230d | 0d |  | Telecom admin | 8h | 560 |
| 30 | 2.4 | Phone lines ordered | milestone | 0d | 2011-05-18 | 2011-05-18 | 29 | 230d | 220d |  |  |  |  |
| 31 | 2.5 | **Design and construction** |  | 93d | 2011-05-12 | 2011-09-19 |  | 138d |  |  |  | 344h | 28,680 |
| 32 | 2.5.1 | **Design space** |  | 66d | 2011-05-12 | 2011-08-11 |  | 138d |  |  |  | 320h | 27,000 |
| 33 | 2.5.1.1 | Design office space |  | 25d | 2011-05-12 | 2011-06-15 | 24 | 138d | 0d |  | Office manager [50%]; Architect | 200h | 17,000 |
| 34 | 2.5.1.2 | Prepare drawings |  | 5d | 2011-06-16 | 2011-06-22 | 33 | 138d | 0d |  | Architect | 40h | 3,600 |
| 35 | 2.5.1.3 | Design IT infrastructure |  | 10d | 2011-06-23 | 2011-07-06 | 34 | 138d | 0d |  | Network mgr | 80h | 6,400 |
| 36 | 2.5.1.4 | Obtain final budget estimates |  | 10d | 2011-07-07 | 2011-07-20 | 35 | 138d | 0d |  |  |  |  |
| 37 | 2.5.1.5 | Sign off on plans |  | 1d | 2011-07-21 | 2011-07-21 | 36 | 138d | 0d |  |  |  |  |
| 38 | 2.5.1.6 | Obtain permits |  | 3w | 2011-07-22 | 2011-08-11 | 37 | 138d | 0d |  |  |  |  |
| 39 | 2.5.2 | **Construction** |  | 20d | 2011-08-12 | 2011-09-08 | 38 | 138d |  |  |  |  |  |
| 40 | 2.5.2.1 | Demolish walls |  | 5d | 2011-08-12 | 2011-08-18 | 25 | 138d | 0d |  |  |  |  |
| 41 | 2.5.2.2 | Construct new walls |  | 15d | 2011-08-19 | 2011-09-08 | 40 | 138d | 0d |  |  |  |  |
| 42 | 2.5.2.3 | Elec, mech, HVAC |  | 15d | 2011-08-19 | 2011-09-08 | 40 | 138d | 0d |  |  |  |  |
| 43 | 2.5.3 | **Walkthrough and repair** |  | 7d | 2011-09-09 | 2011-09-19 | 42, 41 | 138d |  |  |  | 24h | 1,680 |
| 44 | 2.5.3.1 | Repair issues |  | 5d | 2011-09-09 | 2011-09-15 |  | 138d | 0d |  |  |  |  |
| 45 | 2.5.3.2 | Schedule open house for employees |  | 1d | 2011-09-09 | 2011-09-09 |  | 152d |  |  | Relo PM; Office manager | 16h | 1,360 |
| 46 | 2.5.3.3 | Clean new office |  | 1d | 2011-09-16 | 2011-09-16 | 44 | 138d | 0d |  | Cleaning service | 8h | 320 |
| 47 | 2.5.3.4 | Construction complete | milestone | 0d | 2011-09-16 | 2011-09-16 | 46 | 146d | 0d |  |  |  |  |
| 48 | 2.5.3.5 | Open house |  | 1d | 2011-09-19 | 2011-09-19 | 47 | 146d |  |  |  |  |  |
| 49 | 2.6 | **Set up services** |  | 10d | 2011-07-07 | 2011-07-20 | 24FS+2mo | 0d |  |  |  | 200h | 15,360 |
| 50 | 2.6.1 | Order change of address labels |  | 1d | 2011-07-07 | 2011-07-07 |  | 9d |  |  | Mailroom | 8h | 320 |
| 51 | 2.6.2 | Obtain estimates from signage companies |  | 7d | 2011-07-07 | 2011-07-15 |  | 0d |  |  | Office manager | 56h | 4,480 |
| 52 | 2.6.3 | Order signage |  | 3d | 2011-07-18 | 2011-07-20 | 51 | 0d |  |  | Office manager | 24h | 1,920 |
| 53 | 2.6.4 | Arrange external maintenance |  | 5d | 2011-07-07 | 2011-07-13 |  | 5d |  |  | Office manager | 40h | 3,200 |
| 54 | 2.6.5 | Arrange for trash disposal |  | 1d | 2011-07-07 | 2011-07-07 |  | 9d |  |  | Office manager | 8h | 640 |
| 55 | 2.6.6 | Arrange for cleaning service |  | 1d | 2011-07-07 | 2011-07-07 |  | 9d |  |  | Office manager | 8h | 640 |
| 56 | 2.6.7 | Arrange for recycling |  | 1d | 2011-07-07 | 2011-07-07 |  | 9d |  |  | Office manager | 8h | 640 |
| 57 | 2.6.8 | Order security system |  | 2d | 2011-07-07 | 2011-07-08 |  | 8d |  |  | Office manager | 16h | 1,280 |
| 58 | 2.6.9 | Send change of address to vendors, customers, supscriptions |  | 1d | 2011-07-07 | 2011-07-07 |  | 9d |  |  | Mailroom | 8h | 320 |
| 59 | 2.6.10 | Notify all leasers of equipment move |  | 1d | 2011-07-07 | 2011-07-07 |  | 9d |  |  | Office manager | 8h | 640 |
| 60 | 2.6.11 | Order checks with new address |  | 1d | 2011-07-07 | 2011-07-07 |  | 9d |  |  | Office manager | 8h | 640 |
| 61 | 2.6.12 | Schedule disconnection of utilities |  | 1d | 2011-07-07 | 2011-07-07 |  | 9d |  |  | Office manager | 8h | 640 |
| 62 | 2.7 | Service setup complete | milestone | 0d | 2011-07-20 | 2012-03-21 | 49 | 0d |  | start no earlier than 2010-09-20 |  |  |  |

| ID | WBS | Task | Type | Duration | Start | Finish | Predecessors | Total slack | Free slack | Resources | Work | Cost |
| --- | --- | --- | --- | --- | --- | --- | --- | --- | --- | --- | --- | --- |
| 63 | 2.8 | **Create office assignment layout** |  | 9d | 2011-06-16 | 2011-06-28 |  | 191d |  |  | 72h | 5,600 |
| 64 | 2.8.1 | Assign office spaces |  | 5d | 2011-06-16 | 2011-06-22 | 33 | 191d | 0d | Office manager | 40h | 3,200 |
| 65 | 2.8.2 | Assign new phone numbers, extensions |  | 2d | 2011-06-23 | 2011-06-24 | 64 | 191d | 0d | Telecom admin | 16h | 1,120 |
| 66 | 2.8.3 | Create new office extension directory |  | 1d | 2011-06-27 | 2011-06-27 | 65 | 191d | 0d |  |  |  |
| 67 | 2.8.4 | Create new office layout map |  | 1d | 2011-06-23 | 2011-06-23 | 64 | 194d | 2d | Office manager | 8h | 640 |
| 68 | 2.8.5 | Create new fax cover sheet |  | 1d | 2011-06-28 | 2011-06-28 | 66 | 191d |  | Office manager | 8h | 640 |
| 69 | 2.8.6 | Office plan complete | milestone | 0d | 2011-06-27 | 2011-06-27 | 67, 66 | 192d | 0d |  |  |  |
| 70 | 2.9 | **Order new stationery** |  | 1d | 2011-06-28 | 2011-06-28 | 69 | 196d |  |  | 48h | 3,440 |
| 71 | 2.9.1 | Order new letterhead and envelopes |  | 1d | 2011-06-28 | 2011-06-28 |  | 196d |  | Office manager | 8h | 640 |
| 72 | 2.9.2 | Order new business cards |  | 1d | 2011-06-28 | 2011-06-28 |  | 196d |  | Office manager | 8h | 640 |
| 73 | 2.9.3 | Order new business forms |  | 1d | 2011-06-28 | 2011-06-28 |  | 196d |  | Office manager | 8h | 640 |
| 74 | 2.9.4 | Get shipping labels |  | 1d | 2011-06-28 | 2011-06-28 |  | 205d |  |  |  |  |
| 75 | 2.9.5 | Create map to location |  | 1d | 2011-06-28 | 2011-06-28 |  | 205d |  | Office manager | 8h | 640 |
| 76 | 2.9.6 | Notify post office of change of address |  | 1d | 2011-06-28 | 2011-06-28 |  | 196d |  | Mailroom | 8h | 320 |
| 77 | 2.9.7 | Update company website with new information |  | 1d | 2011-06-28 | 2011-06-28 |  | 196d |  | Webmaster | 8h | 560 |
| 78 | 2.10 | **Hire movers** |  | 13d | 2011-06-09 | 2011-06-27 | 24FS+1mo | 192d |  |  | 104h | 9,360 |
| 79 | 2.10.1 | Obtain estimates from moving companies |  | 12d | 2011-06-09 | 2011-06-24 |  | 192d | 0d | Relo PM | 96h | 8,640 |
| 80 | 2.10.2 | Choose moving company |  | 1d | 2011-06-27 | 2011-06-27 | 79 | 192d |  | Relo PM | 8h | 720 |
| 81 | 2.11 | **Obtain insurance** |  | 10d | 2011-05-12 | 2011-05-25 |  | 215d |  |  | 80h | 6,640 |
| 82 | 2.11.1 | Appraise assets |  | 3d | 2011-05-12 | 2011-05-16 |  | 215d | 0d | Accounting mgr | 24h | 2,160 |
| 83 | 2.11.2 | Obtain quotes for insurance |  | 6d | 2011-05-17 | 2011-05-24 | 82 | 215d | 0d | Office manager | 48h | 3,840 |
| 84 | 2.11.3 | Purchase insurance |  | 1d | 2011-05-25 | 2011-05-25 | 83 | 215d |  | Office manager | 8h | 640 |
| 85 | 3 | Construction and prep complete | milestone | 0d | 2012-03-21 | 2012-03-21 | 62, 80, 84, 63 | 0d |  |  |  |  |
| 86 | 4 | **Move** |  | 5d | 2012-03-22 | 2012-03-28 | 85 | 0d |  |  | 16h | 1,280 |
| 87 | 4.1 | Distribute new keys, cards |  | 1d | 2012-03-22 | 2012-03-22 |  | 4d |  | Office manager | 8h | 640 |
| 88 | 4.2 | Collect old keys, cards |  | 1d | 2012-03-22 | 2012-03-22 |  | 0d |  | Office manager | 8h | 640 |
| 89 | 4.3 | Pack and move |  | 4d | 2012-03-23 | 2012-03-28 | 88, 23 | 0d |  |  |  |  |
| 90 | 4.4 | Move complete | milestone | 0d | 2012-03-28 | 2012-03-28 | 65, 87, 71, 72, 73, 44, 46, 76, 77, 61, 89, 23 | 0d |  |  |  |  |

| ID | WBS | Task | Type | Duration | Start | Finish | Predecessors | Total slack | Resources | Work | Cost |
| --- | --- | --- | --- | --- | --- | --- | --- | --- | --- | --- | --- |
| 91 | 5 | **Pre-move tasks** |  | 4d | 2012-03-22 | 2012-03-27 | 86SS | 10d |  | 32h | 2,240 |
| 92 | 5.1 | Install phone system |  | 4d | 2012-03-22 | 2012-03-27 | 30 | 10d | Telecom admin | 32h | 2,240 |
| 93 | 6 | **Post-Move** |  | 9d | 2012-03-29 | 2012-04-10 | 90 | 0d |  | 104h | 8,320 |
| 94 | 6.1 | Check for damage and missing items |  | 9d | 2012-03-29 | 2012-04-10 |  | 0d | Office manager | 72h | 5,760 |
| 95 | 6.2 | Schedule phone training |  | 1d | 2012-03-29 | 2012-03-29 |  | 8d | Telecom admin | 8h | 560 |
| 96 | 6.3 | Schedule security training |  | 1d | 2012-03-29 | 2012-03-29 |  | 8d | Office manager | 8h | 640 |
| 97 | 6.4 | Schedule fire drill |  | 1d | 2012-03-29 | 2012-03-29 |  | 8d | Office manager | 8h | 640 |
| 98 | 6.5 | Schedule open house for clients |  | 1d | 2012-03-29 | 2012-03-29 |  | 8d | Relo PM | 8h | 720 |
| 99 | 6.6 | Office move complete | milestone | 0d | 2012-04-10 | 2012-04-10 | 90, 94, 95, 96, 97, 98 | 0d |  |  |  |
